# FI-2 Master Plan Rev. 2

Schedule from MS Project XML, 2019-06-07 to 2019-12-27, status date 2019-09-27, A marks actual dates.
Hermosillo

## Calendars

- Hermosillo: Mon-Fri 08:00-13:00, 14:00-17:45; Sat 08:00-13:00; Sun off. Exceptions (off unless hours are given): 2019-09-15 08:00-13:00, 14:00-17:45 (Libranza (1)), 2019-11-18 08:00-13:00, 14:00-17:45 (Libranza (2)), 2019-12-12 (Día de la Virgen de Guadalupe), 2019-12-25 (Navidad).

## Schedule

| ID | WBS | Task | Type | Duration | Start | Finish | Predecessors | Complete | Remaining | Baseline start | Baseline finish | Baseline duration | Baseline 1 start | Baseline 1 finish | Total slack | Free slack | Texto1 | Texto2 | Texto3 |
| --- | --- | --- | --- | --- | --- | --- | --- | --- | --- | --- | --- | --- | --- | --- | --- | --- | --- | --- | --- |
| 1 | 1 | **CATERPILLAR FI-2** |  | 176d | 2019-06-07 A | 2019-12-27 |  | 36% | 112.35d | 2019-05-29 | 2019-12-13 | 138.38d | 2019-06-07 | 2020-01-04 | 0d |  | Task Type | Simulation | Tipo de tarea |
| 2 | 1.1 | Selección de GC (por Caterpillar) | milestone | 0d | 2019-06-07 A | 2019-06-07 A |  | 100% |  | 2019-05-29 | 2019-05-29 | 1d | 2019-06-07 | 2019-06-07 |  |  | Construct |  | PLA |
| 3 | 1.2 | Orden de Compra (por Caterpillar) | milestone | 0d | 2019-07-08 A | 2019-07-08 A | 2FS+27d | 100% |  | 2019-06-07 | 2019-06-07 | 1d | 2019-07-08 | 2019-07-08 |  |  |  |  | PLA |
| 4 | 1.3 | Aprobación de Alternativas | milestone | 0d | 2019-07-08 A | 2019-07-08 A | 3 | 100% |  | 2019-05-29 | 2019-05-30 | 1d | 2019-07-08 | 2019-07-08 |  |  | Construct |  | PLA |
| 5 | 1.4 | Aprobación de Equipos/Materiales |  | 51d | 2019-07-08 A | 2019-09-04 A | 3 | 100% |  | 2019-06-05 | 2019-06-10 | 5d | 2019-07-08 | 2019-09-04 |  |  | Construct |  | PLA |
| 6 | 1.5 | Freeze Layout |  | 64d | 2019-07-08 A | 2019-09-18 | 3 | 97% | 1.92d | 2019-06-05 | 2019-06-10 | 5.5d | 2019-07-08 | 2019-09-17 | 0.2d | 0d | Construct |  | PLA |
| 7 | 1.6 | Permiso de Construcción | milestone | 0d | 2019-09-25 A | 2019-09-30 | 3FS+74d | 95% | 0d |  |  |  |  |  | 10d | 0d | Construct |  | PLA |
| 8 | 1.7 | **PRECONSTRUCCIÓN** |  | 132d | 2019-07-08 A | 2019-12-05 |  | 53% | 62.41d | 2019-05-30 | 2019-11-04 | 110.75d | 2019-07-08 | 2019-12-06 | 17d |  |  |  |  |
| 9 | 1.7.1 | Diseño |  | 72d | 2019-07-08 A | 2019-09-27 | 4 | 80% | 14.4d | 2019-05-30 | 2019-08-10 | 70d | 2019-07-08 | 2019-09-27 | 77d | 0d | Construct |  | PLA |
| 10 | 1.7.2 | **Compras y Suministros** |  | 108d | 2019-08-05 A | 2019-12-05 |  | 49% | 55.26d | 2019-06-10 | 2019-11-04 | 100.75d | 2019-08-05 | 2019-12-06 | 17d |  | Construct |  |  |
| 11 | 1.7.2.1 | Compresores |  | 107d | 2019-08-06 A | 2019-12-05 | 5SS+25d | 44% | 59.92d | 2019-06-10 | 2019-11-04 | 101.75d | 2019-08-06 | 2019-12-06 | 0d |  | Construct |  | PLA |
| 12 | 1.7.2.2 | Compresores - Tubería |  | 12d | 2019-09-04 | 2019-09-17 | 5 |  |  |  |  |  | 2019-09-04 | 2019-09-17 | 17d | 0d | Construct |  | PLA |
| 13 | 1.7.2.3 | Torre de Enfriamiento |  | 50d | 2019-08-13 A | 2019-10-08 | 5SS+31d | 83% | 8.5d | 2019-06-10 | 2019-08-10 | 60d | 2019-08-13 | 2019-10-08 | 68d |  | Construct |  | PLA |
| 14 | 1.7.2.4 | Torre de Enfriamiento - Escalera |  | 36d | 2019-09-18 | 2019-10-30 | 6 |  |  |  |  |  | 2019-09-17 | 2019-10-29 | 0.2d | 0d | Construct |  | PLA |
| 15 | 1.7.2.5 | Bombas |  | 47d | 2019-08-13 A | 2019-10-04 | 5SS+31d | 76% | 11.28d | 2019-06-10 | 2019-08-10 | 60d | 2019-08-13 | 2019-10-04 | 9d | 0d | Construct |  | PLA |
| 16 | 1.7.2.6 | Transformadores 4000kVA |  | 72d | 2019-08-05 A | 2019-10-25 | 5SS+24d | 67% | 23.76d |  |  |  |  |  | 41d | 27d | Construct |  | PLA |
| 17 | 1.7.2.7 | Tablero Baja Tensión |  | 75d | 2019-09-02 A | 2019-11-25 | 5SS+48d | 33% | 50.25d | 2019-06-10 | 2019-09-09 | 88d | 2019-08-05 | 2019-11-22 | 14d | 0d | Construct |  | PLA |
| 18 | 1.7.2.8 | Subestación Compacta 15kV |  | 58d | 2019-09-16 A | 2019-11-21 | 5SS+62d | 13% | 50.46d |  |  |  |  |  | 17d | 3d | Construct |  | PLA |
| 19 | 1.7.2.9 | Generador de Emergencia |  | 48d | 2019-09-02 A | 2019-10-25 | 5SS+48d | 87% | 6.24d | 2019-06-10 | 2019-08-30 | 79d | 2019-09-02 | 2019-10-25 | 39d | 0d | Construct |  | PLA |
| 20 | 1.8 | **CONSTRUCCIÓN** |  | 168.19d | 2019-06-17 A | 2019-12-27 |  | 19% | 136.92d | 2019-06-07 | 2019-12-13 | 129.38d | 2019-07-17 | 2020-01-04 | 0d |  |  |  |  |
| 21 | 1.8.1 | **Compresores** |  | 53d | 2019-10-25 | 2019-12-27 |  |  |  | 2019-06-07 | 2019-12-13 | 129.38d | 2019-10-25 | 2020-01-04 | 0d |  |  |  |  |
| 22 | 1.8.1.1 | Línea de Distribución |  | 36d | 2019-10-25 | 2019-12-05 | 12FS+33d |  |  | 2019-06-07 | 2019-11-05 | 104.75d | 2019-10-25 | 2019-12-06 | 17d |  | Construct |  | PLA |
| 23 | 1.8.1.2 | Instalación de Equipos |  | 27d | 2019-11-18 | 2019-12-19 | 11FS-16d |  |  | 2019-11-05 | 2019-11-30 | 13.25d | 2019-12-06 | 2019-12-27 | 0d |  | Construct |  | EXE |
| 24 | 1.8.1.3 | Punch list |  | 6d | 2019-12-19 | 2019-12-27 | 23 |  |  | 2019-12-02 | 2019-12-13 | 12.25d | 2019-12-27 | 2020-01-04 | 0d |  | Construct |  | PLA |
| 25 | 1.8.1.4 | Entrega final | milestone | 0d | 2019-12-27 | 2019-12-27 | 24 |  |  | 2019-12-13 | 2019-12-13 | 1d | 2020-01-04 | 2020-01-04 | 0d |  | Construct |  | PLA |

Notes:
- 17: Incluye: (2) Subestación Compacta, (2) Transformador 4000kVA, (1) Tablero Principal de 5000A con 12 derivados de 1250A. / Llegada de transformadores: 25/10/19
- 19: Incluye 2 semanas para proceso de Compras. / Submittal Aprobado: 27ago2019
- 23: Incluye interconexión

| ID | WBS | Task | Type | Duration | Start | Finish | Predecessors | Complete | Remaining | Baseline start | Baseline finish | Baseline duration | Baseline 1 start | Baseline 1 finish | Total slack | Free slack | Texto1 | Texto3 |
| --- | --- | --- | --- | --- | --- | --- | --- | --- | --- | --- | --- | --- | --- | --- | --- | --- | --- | --- |
| 26 | 1.8.2 | **Torre de Enfriamiento** |  | 70d | 2019-09-25 A | 2019-12-16 |  |  | 69.89d | 2019-06-20 | 2019-10-29 | 90.75d | 2019-09-06 | 2019-12-26 | 9d |  |  |  |
| 27 | 1.8.2.1 | Instalación de Escalera |  | 20d | 2019-10-30 A | 2019-11-21 | 14 | 1% | 19.8d |  |  |  | 2019-10-29 | 2019-11-12 | 23d | 14d | Construct | EXE |
| 28 | 1.8.2.2 | Adecuación de Plataforma |  | 24d | 2019-09-25 | 2019-10-23 | 15FF+16d |  |  | 2019-06-20 | 2019-08-03 | 43.25d | 2019-09-09 | 2019-10-04 | 55d |  | Construct | EXE |
| 29 | 1.8.2.3 | Línea de Suministro y Retorno |  | 25d | 2019-09-28 | 2019-10-28 | 15FF+20d |  |  |  |  |  | 2019-09-06 | 2019-10-04 | 51d |  | Construct | EXE |
| 30 | 1.8.2.4 | Instalación de Equipos y Torre |  | 26d | 2019-10-04 | 2019-11-04 | 15 |  |  | 2019-08-12 | 2019-08-24 | 12.5d | 2019-10-04 | 2019-11-12 | 9d | 0d | Construct | EXE |
| 31 | 1.8.2.5 | Reubicación de Torre Existente |  | 21d | 2019-11-13 | 2019-12-07 | 30FS+9d |  |  | 2019-09-09 | 2019-10-07 | 10d | 2019-11-22 | 2019-12-18 | 9d | 0d | Construct | PLA |
| 32 | 1.8.2.6 | Punch List |  | 6d | 2019-12-07 | 2019-12-16 | 31, 27 |  |  | 2019-10-08 | 2019-10-29 | 5.12d | 2019-12-18 | 2019-12-26 | 9d | 0d | Construct | PLA |
| 33 | 1.8.2.7 | Entrega Final | milestone | 0d | 2019-12-16 | 2019-12-16 | 32 |  |  | 2019-10-29 | 2019-10-29 | 1d | 2019-12-26 | 2019-12-26 | 9d |  | Construct | PLA |
| 34 | 1.8.3 | **Subestación Eléctrica Unificada** |  | 72d | 2019-09-17 A | 2019-12-09 |  | 16% | 60.71d | 2019-06-15 | 2019-10-18 | 94.75d | 2019-09-17 | 2019-12-06 | 14d |  |  |  |
| 35 | 1.8.3.1 | Reubicación de Subestación 6 |  | 8d | 2019-09-17 A | 2019-09-26 A | 9SS+63d | 100% |  |  |  |  | 2019-09-17 | 2019-09-26 |  |  | Construct | PLA |
| 36 | 1.8.3.2 | Alimentador a Subestación 11 |  | 31d | 2019-10-28 | 2019-12-02 | 37FF |  |  | 2019-06-15 | 2019-08-31 | 75.25d | 2019-10-24 | 2019-11-29 | 20d |  | Construct | EXE |
| 37 | 1.8.3.3 | Instalación de Equipos |  | 6d | 2019-11-25 | 2019-12-02 | 17, 57, 16, 18 |  |  | 2019-08-31 | 2019-09-30 | 17.62d | 2019-11-22 | 2019-11-29 | 14d | 0d | Construct | EXE |
| 38 | 1.8.3.4 | Power On | milestone | 0d | 2019-12-02 | 2019-12-02 | 37 |  |  |  |  |  | 2019-11-29 | 2019-11-29 | 20d |  | Construct | EXE |
| 39 | 1.8.3.5 | Punch List |  | 6d | 2019-12-02 | 2019-12-09 | 37 |  |  | 2019-10-01 | 2019-10-07 | 2d | 2019-11-29 | 2019-12-06 | 14d | 0d | Construct | PLA |
| 40 | 1.8.3.6 | Entrega Final | milestone | 0d | 2019-12-09 | 2019-12-09 | 39 |  |  | 2019-10-18 | 2019-10-18 | 1d | 2019-12-06 | 2019-12-06 | 14d |  | Construct | PLA |
| 41 | 1.8.4 | **Planta de Emergencia** |  | 42d | 2019-09-23 | 2019-11-11 |  |  |  | 2019-06-15 | 2019-09-18 | 90.75d | 2019-09-23 | 2019-11-11 | 39d |  |  |  |
| 42 | 1.8.4.1 | Instalación de Generador 100kW |  | 2d | 2019-10-25 | 2019-10-28 | 19 |  |  | 2019-08-30 | 2019-09-10 | 10d | 2019-10-25 | 2019-10-28 | 39d | 0d | Construct | EXE |
| 43 | 1.8.4.2 | Reubicación e Instalación de Generador 800kW |  | 6d | 2019-10-28 | 2019-11-04 | 42 |  |  |  |  |  | 2019-10-28 | 2019-11-04 | 39d | 0d | Construct | EXE |
| 44 | 1.8.4.3 | Alimentador a Subestación 10 |  | 24d | 2019-10-07 | 2019-11-04 | 43FF |  |  | 2019-06-15 | 2019-08-16 | 60d | 2019-10-07 | 2019-11-04 | 45d |  | Construct | EXE |
| 45 | 1.8.4.4 | Distribución a Equipos |  | 36d | 2019-09-23 | 2019-11-04 | 43FF |  |  | 2019-06-15 | 2019-08-16 | 60d | 2019-09-23 | 2019-11-04 | 39d | 0d | Construct | EXE |
| 46 | 1.8.4.5 | Punch List |  | 6d | 2019-11-04 | 2019-11-11 | 45 |  |  | 2019-09-11 | 2019-09-17 | 5d | 2019-11-04 | 2019-11-11 | 39d | 0d | Construct | PLA |
| 47 | 1.8.4.6 | Entrega Final | milestone | 0d | 2019-11-11 | 2019-11-11 | 46 |  |  | 2019-09-18 | 2019-09-18 | 1d | 2019-11-11 | 2019-11-11 | 39d |  | Construct | PLA |
| 48 | 1.8.5 | **Cuarto Mecánico** |  | 85d | 2019-09-09 A | 2019-12-14 |  | 4% | 81.62d | 2019-06-10 | 2019-09-13 | 92d | 2019-09-09 | 2019-12-23 | 10d |  |  |  |
| 49 | 1.8.5.1 | Demoliciones y Reubicaciones |  | 20d | 2019-09-09 A | 2019-09-30 | 9SS+54d | 95% | 1d | 2019-06-10 | 2019-07-01 | 20d | 2019-09-09 | 2019-09-30 | 75d |  | Construct | PLA |

Notes:
- 30: Se resume actividad por llegada de Torre desfasada. / Duración de instalación de bombas: 1 semanas. / Duración de instalación de torre e interconexión de equipos: 3 semanas.
- 31: Incluye delay por periodo de prueba de 3 semanas requerido por Caterpillar.
- 42: En HUB - Planta Ciénega de Flores

| ID | WBS | Task | Type | Duration | Start | Finish | Predecessors | Complete | Remaining | Baseline start | Baseline finish | Baseline duration | Baseline 1 start | Baseline 1 finish | Total slack | Free slack | Texto1 | Texto3 | Texto2 |
| --- | --- | --- | --- | --- | --- | --- | --- | --- | --- | --- | --- | --- | --- | --- | --- | --- | --- | --- | --- |
| 50 | 1.8.5.2 | **Cuarto Eléctrico** |  | 49d | 2019-09-26 A | 2019-11-21 |  |  | 49d |  |  |  | 2019-09-26 | 2019-11-21 | 29d |  |  |  |  |
| 51 | 1.8.5.2.1 | Reubicación de Subestación 6 | milestone | 0d | 2019-09-26 A | 2019-09-26 A | 35 | 100% |  |  |  |  | 2019-09-26 | 2019-09-26 |  |  | Construct | PLA |  |
| 52 | 1.8.5.2.2 | Estructura y Laminación |  | 4d | 2019-10-03 | 2019-10-08 | 51FS+6d |  |  |  |  |  |  |  | 27d | 0d | Construct | EXE |  |
| 53 | 1.8.5.2.3 | Albañilería |  | 5d | 2019-10-08 | 2019-10-14 | 52 |  |  |  |  |  |  |  | 27d | 0d | Construct | EXE |  |
| 54 | 1.8.5.2.4 | Acabados |  | 6d | 2019-11-14 | 2019-11-21 | 55FS+2d |  |  |  |  |  |  |  | 23d | 13d | Construct | EXE |  |
| 55 | 1.8.5.2.5 | Eléctrico |  | 41d | 2019-09-26 | 2019-11-12 | 51 |  |  |  |  |  |  |  | 23d | 0d | Construct | EXE |  |
| 56 | 1.8.5.2.6 | Fire Protection |  | 34d | 2019-10-04 | 2019-11-12 | 52SS+1d |  |  |  |  |  |  |  | 37d |  | Construct | EXE |  |
| 57 | 1.8.5.2.7 | HVAC |  | 23d | 2019-10-15 | 2019-11-11 | 53FS+1d |  |  |  |  |  | 2019-09-26 | 2019-11-21 | 27d | 13d | Construct | EXE |  |
| 58 | 1.8.5.3 | **Cuarto de Compresores** |  | 59d | 2019-09-30 | 2019-12-06 |  |  |  |  |  |  | 2019-09-30 | 2019-12-05 | 10d |  |  |  |  |
| 59 | 1.8.5.3.1 | Obra Civil |  | 5d | 2019-09-30 | 2019-10-05 | 7 |  |  | 2019-06-15 | 2019-07-16 | 30d | 2019-10-07 | 2019-10-21 | 10d | 0d | Construct | EXE | CDC_01 |
| 60 | 1.8.5.3.2 | Estructura y Laminación |  | 19d | 2019-10-07 | 2019-10-29 | 59FS+1d |  |  |  |  |  |  |  | 10d | 0d | Construct | EXE | CDC_02 |
| 61 | 1.8.5.3.3 | Pisos |  | 5d | 2019-10-29 | 2019-11-04 | 60 |  |  |  |  |  |  |  | 10d | 0d | Construct | EXE | CDC_03 |
| 62 | 1.8.5.3.4 | Acabados |  | 6d | 2019-11-29 | 2019-12-06 | 63FS+1d, 64FS+1d, 65FS+1d |  |  |  |  |  |  |  | 10d | 0d | Construct | EXE | CDC_04 |
| 63 | 1.8.5.3.5 | Eléctrico |  | 22d | 2019-11-04 | 2019-11-28 | 61 |  |  |  |  |  |  |  | 10d | 0d | Construct | EXE | CDC_05 |
| 64 | 1.8.5.3.6 | Mecánico |  | 21d | 2019-11-05 | 2019-11-28 | 63SS+1d |  |  |  |  |  |  |  | 10d | 0d | Construct | EXE | CDC_06 |
| 65 | 1.8.5.3.7 | HVAC |  | 20d | 2019-11-06 | 2019-11-28 | 63SS+2d |  |  |  |  |  |  |  | 10d | 0d | Construct | EXE | CDC_07 |
| 66 | 1.8.5.3.8 | Fire Protection |  | 13d | 2019-11-11 | 2019-11-25 | 63SS+6d |  |  |  |  |  |  |  | 26d |  | Construct | EXE | CDC_08 |
| 67 | 1.8.5.4 | **Oficinas y Talleres** |  | 51d | 2019-09-30 | 2019-11-27 |  |  |  |  |  |  | 2019-09-30 | 2019-12-16 | 18d |  |  |  |  |
| 68 | 1.8.5.4.1 | Estructura Subestación |  | 29d | 2019-10-07 | 2019-11-08 | 60SS |  |  |  |  |  | 2019-09-30 | 2019-12-16 | 40d |  | Construct | EXE | OFT_01 |
| 69 | 1.8.5.4.2 | Albañilería |  | 43d | 2019-09-30 | 2019-11-18 | 59SS |  |  |  |  |  |  |  | 18d | 0d | Construct | EXE | OFT_02 |
| 70 | 1.8.5.4.3 | Acabados |  | 27d | 2019-10-16 | 2019-11-15 | 69SS+14d |  |  |  |  |  |  |  | 18d | 0d | Construct | EXE | OFT_03 |
| 71 | 1.8.5.4.4 | Eléctrico |  | 31d | 2019-10-23 | 2019-11-27 | 70SS+6d |  |  |  |  |  |  |  | 18d | 0d | Construct | EXE | OFT_04 |
| 72 | 1.8.5.4.5 | HVAC |  | 24d | 2019-10-24 | 2019-11-20 | 71SS+1d |  |  |  |  |  |  |  | 30d |  | Construct | EXE | OFT_05 |
| 73 | 1.8.5.4.6 | Mecánico |  | 51d | 2019-09-30 | 2019-11-27 | 69SS |  |  |  |  |  |  |  | 24d |  | Construct | EXE | OFT_06 |
| 74 | 1.8.5.4.7 | Fire Protection |  | 23d | 2019-10-24 | 2019-11-19 | 71SS+1d |  |  |  |  |  |  |  | 31d |  | Construct | EXE | OFT_07 |
| 75 | 1.8.5.5 | Punch List |  | 6d | 2019-12-06 | 2019-12-14 | 62, 71, 70, 54, 55, 63 |  |  | 2019-09-06 | 2019-09-12 | 6d | 2019-12-16 | 2019-12-23 | 10d | 0d | Construct | PLA |  |
| 76 | 1.8.5.6 | Entrega Final | milestone | 0d | 2019-12-14 | 2019-12-14 | 75 |  |  | 2019-09-12 | 2019-09-13 | 1d | 2019-12-23 | 2019-12-23 | 10d |  | Construct | PLA |  |

| ID | WBS | Task | Type | Duration | Start | Finish | Predecessors | Complete | Remaining | Baseline start | Baseline finish | Baseline duration | Baseline 1 start | Baseline 1 finish | Total slack | Free slack | Texto1 | Texto2 | Texto3 |
| --- | --- | --- | --- | --- | --- | --- | --- | --- | --- | --- | --- | --- | --- | --- | --- | --- | --- | --- | --- |
| 77 | 1.8.6 | **Piso Planta 3** |  | 78.19d | 2019-06-17 A | 2019-09-13 A |  | 100% |  | 2019-06-10 | 2019-08-07 | 56d | 2019-07-17 | 2019-09-13 |  |  |  |  |  |
| 78 | 1.8.6.1 | Edificio Existente |  | 5d | 2019-07-17 A | 2019-07-23 A | 9SS+8d | 100% |  | 2019-06-10 | 2019-07-01 | 20d | 2019-07-17 | 2019-07-23 |  |  | Construct | PEX_01 | EXE |
| 79 | 1.8.6.2 | Obra Civil, Terracerías y Herrería |  | 72.19d | 2019-06-17 A | 2019-09-06 A | 78 | 100% |  | 2019-07-01 | 2019-08-01 | 30d | 2019-07-23 | 2019-09-06 |  |  | Construct |  | EXE |
| 80 | 1.8.6.3 | Punch List |  | 6d | 2019-09-06 A | 2019-09-13 A | 79 | 100% |  | 2019-08-01 | 2019-08-06 | 5d | 2019-09-06 | 2019-09-13 |  |  | Construct |  | PLA |
| 81 | 1.8.6.4 | Entrega Final | milestone | 0d | 2019-09-13 A | 2019-09-13 A | 80 | 100% |  | 2019-08-06 | 2019-08-07 | 1d | 2019-09-13 | 2019-09-13 |  |  | Construct |  | PLA |
| 82 | 1.8.7 | **Bajantes Pluviales** |  | 80.19d | 2019-07-27 A | 2019-10-26 |  | 91% | 7.43d |  |  |  | 2019-07-27 | 2019-09-26 | 51.81d |  |  |  |  |
| 83 | 1.8.7.1 | Colector Interior |  | 35d | 2019-07-27 A | 2019-10-22 | 9SS+17d | 96% | 1.4d |  |  |  | 2019-07-27 | 2019-09-19 | 51.91d | 0d | Construct |  | EXE |
| 84 | 1.8.7.2 | Colector Exterior |  | 34d | 2019-08-08 A | 2019-10-22 | 83SS+10d | 96% | 1.36d |  |  |  | 2019-08-08 | 2019-09-19 | 51.81d | 0d | Construct |  | EXE |
| 85 | 1.8.7.3 | Punch List |  | 4d | 2019-10-22 | 2019-10-26 | 83, 84 |  |  |  |  |  | 2019-09-19 | 2019-09-26 | 51.81d | 0d | Construct |  | PLA |
| 86 | 1.8.7.4 | Entrega Final | milestone | 0d | 2019-10-26 | 2019-10-26 | 85 |  |  |  |  |  | 2019-09-26 | 2019-09-26 | 51.81d |  | Construct |  | PLA |

Notes:
- 83: Tarea dividida por cambio en alcance solicitado por Caterpillar. / División 1: Espera de material. / División 2: Espera a finalización de trabajos colector exterior (pendiente reposición de firme).
