# Venus shell design phase 1&2 12-28-17

Schedule from MS Project XML, 2019-07-19 to 2020-04-03, status date 2019-10-08, A marks actual dates.

## Calendars

- Estándar: Mon-Fri 09:00-13:00, 15:00-19:00; Sat 08:00-18:00; Sun off.

## Resources

| Resource |
| --- |
| 7 |
| 11 |
| 64 |
| Arq. Padres |

## Schedule

| ID | WBS | Task | Type | Duration | Start | Finish | Predecessors | Complete | Remaining | Baseline start | Baseline finish | Baseline duration | Total slack | Texto1 | Texto2 | Texto3 |
| --- | --- | --- | --- | --- | --- | --- | --- | --- | --- | --- | --- | --- | --- | --- | --- | --- |
| 1 | 1 | **MXC DC DISTRUBUTION CENTER MEXICALI** |  | 231.5d | 2019-07-19 A | 2020-04-03 |  | 30% | 162.34d | 2019-07-19 | 2020-04-03 | 231.5d | 0d | Task Type | Simulation | Tipo de tarea |
| 2 | 1.1 | **Shell Contruction Phase 1** |  | 195d | 2019-07-31 A | 2020-03-05 |  | 36% | 125.04d | 2019-07-31 | 2020-03-05 | 195d | 26d |  |  | PLA |
| 3 | 1.1.1 | Contract approval | milestone | 0d | 2019-07-31 A | 2019-07-31 A |  | 100% |  | 2019-07-31 | 2019-07-31 |  |  | Construct |  | PLA |
| 4 | 1.1.2 | **Undergrounding system.** |  | 83d | 2019-08-15 A | 2019-11-16 |  | 73% | 22.23d | 2019-08-15 | 2019-11-16 | 83d | 124d |  |  |  |
| 5 | 1.1.2.1 | Undergrounding system |  | 21d | 2019-08-15 A | 2019-09-07 A | 3FS+14d | 100% |  | 2019-08-15 | 2019-09-07 | 21d |  |  |  |  |
| 6 | 1.1.2.2 | IFC Piping drawings (Delivery By Client) | milestone | 0d | 2019-08-27 A | 2019-08-27 A | 3FS+25d | 100% |  | 2019-08-27 | 2019-08-27 |  |  | Construct | PIP_01 | PLA |
| 7 | 1.1.2.3 | IFC Real delivery date | milestone | 0d | 2019-09-05 A | 2019-09-05 A | 6FS+8d | 100% |  | 2019-09-05 | 2019-09-05 |  |  | Construct | PIP_01 | PLA |
| 8 | 1.1.2.4 | **Piping the Undergrounding system** |  | 61d | 2019-09-09 A | 2019-11-16 |  | 67% | 20.11d | 2019-09-09 | 2019-11-16 | 61d | 124d |  |  |  |
| 9 | 1.1.2.4.1 | Line 1 excavation and demolition |  | 7d | 2019-09-09 A | 2019-09-17 A | 7FS+3d | 100% |  | 2019-09-09 | 2019-09-17 | 7d |  | Construct | PIP_01 | EXE |
| 10 | 1.1.2.4.2 | Line 1 piping placement |  | 9d | 2019-09-17 A | 2019-09-26 A | 9 | 100% |  | 2019-09-17 | 2019-09-26 | 9d |  | Construct | PIP_01 | EXE |
| 11 | 1.1.2.4.3 | Line 2 excavation and demolition |  | 7d | 2019-09-17 A | 2019-09-24 A | 9 | 100% |  | 2019-09-17 | 2019-09-24 | 7d |  | Construct | PIP_01 | EXE |
| 12 | 1.1.2.4.4 | Line 2 piping placement |  | 7d | 2019-09-27 A | 2019-10-04 A | 10 | 100% |  | 2019-09-27 | 2019-10-04 | 7d |  | Construct | PIP_01 | EXE |
| 13 | 1.1.2.4.5 | Line 3 piping placement |  | 10d | 2019-09-25 A | 2019-10-05 A | 11 | 100% |  | 2019-09-25 | 2019-10-05 | 10d |  | Construct | PIP_01 | EXE |
| 14 | 1.1.2.4.6 | Line 4 piping placement |  | 14d | 2019-10-05 A | 2019-10-21 A | 13, 12 | 100% |  | 2019-10-05 | 2019-10-21 | 14d |  | Construct | PIP_01 | EXE |
| 15 | 1.1.2.4.7 | Line 5 piping placement |  | 7d | 2019-10-22 A | 2019-10-29 A | 14 | 100% |  | 2019-10-22 | 2019-10-29 | 7d |  | Construct | PIP_01 | EXE |
| 16 | 1.1.2.4.8 | Line 6 piping placement |  | 30d | 2019-10-14 | 2019-11-16 | 14FS-7d |  |  | 2019-10-14 | 2019-11-16 | 30d | 124d | Construct | PIP_01 | EXE |
| 17 | 1.1.3 | **Foundations** |  | 69d | 2019-08-14 A | 2019-10-30 |  | 95% | 3.49d | 2019-08-14 | 2019-10-30 | 69d | 139d |  |  |  |
| 18 | 1.1.3.1 | IFC Fondation drawings (Delivery By Client) | milestone | 0d | 2019-08-14 A | 2019-08-14 A | 3FS+13d | 100% |  | 2019-08-14 | 2019-08-14 |  |  | Construct | FOU_01 | PLA |
| 19 | 1.1.3.2 | IFC Real delivery date | milestone | 0d | 2019-08-15 A | 2019-08-15 A | 18FS+1d | 100% |  | 2019-08-15 | 2019-08-15 |  |  | Construct | FOU_01 | PLA |
| 20 | 1.1.3.3 | Fondation works contract |  | 2d | 2019-08-15 A | 2019-08-17 A | 19 | 100% |  | 2019-08-15 | 2019-08-17 | 2d |  | Construct | FOU_01 | PLA |
| 21 | 1.1.3.4 | Isolated footing PERIMETRAL |  | 25d | 2019-08-23 A | 2019-09-20 A | 20FS+1d, 5FS-14d | 100% |  | 2019-08-23 | 2019-09-20 | 25d |  |  |  | EXE |
| 22 | 1.1.3.5 | Isolated footing CENTRALES |  | 22d | 2019-09-20 A | 2019-10-15 A | 21, 5 | 100% |  | 2019-09-20 | 2019-10-15 | 22d |  | Construct | FOU_01 | EXE |
| 23 | 1.1.3.6 | Continuous footing |  | 22d | 2019-09-20 A | 2019-10-15 | 21 | 90% | 2.2d | 2019-09-20 | 2019-10-15 | 22d | 19d | Construct | FOU_02 | EXE |
| 24 | 1.1.3.7 | Isolated footing TI´S |  | 14d | 2019-10-15 A | 2019-10-30 | 22 | 85% | 2.1d | 2019-10-15 | 2019-10-30 | 14d | 139d | Construct | FOU_03 | PLA |

| ID | WBS | Task | Type | Duration | Start | Finish | Predecessors | Complete | Remaining | Baseline start | Baseline finish | Baseline duration | Total slack | Free slack | Constraint | Texto1 | Texto2 | Texto3 |
| --- | --- | --- | --- | --- | --- | --- | --- | --- | --- | --- | --- | --- | --- | --- | --- | --- | --- | --- |
| 25 | 1.1.4 | **Structure** |  | 103d | 2019-08-17 A | 2019-12-11 |  | 38% | 63.81d | 2019-08-17 | 2019-12-11 | 103d | 0d |  |  |  |  |  |
| 26 | 1.1.4.1 | IFC Structural steel drawings (Delivery By Client) | milestone | 0d | 2019-08-17 A | 2019-08-17 A | 3FS+16d | 100% |  | 2019-08-17 | 2019-08-17 |  |  |  |  | Construct | STR_01 | PLA |
| 27 | 1.1.4.2 | IFC Real delivery date | milestone | 0d | 2019-08-27 A | 2019-08-27 A | 26FS+9d | 100% |  | 2019-08-27 | 2019-08-27 |  |  |  |  | Construct | STR_01 | PLA |
| 28 | 1.1.4.3 | Structural steel works conttract |  | 9d | 2019-08-28 A | 2019-09-06 A | 27 | 100% |  | 2019-08-28 | 2019-09-06 | 9d |  |  |  | Construct | STR_01 | PLA |
| 29 | 1.1.4.4 | Shop drawings |  | 21d | 2019-09-06 A | 2019-09-30 A | 28 | 100% |  | 2019-09-06 | 2019-09-30 | 21d |  |  | finish no earlier than 2019-09-30 | Construct | STR_01 | PLA |
| 30 | 1.1.4.5 | Structural steel fabrication |  | 21d | 2019-09-23 A | 2019-10-16 | 29FS-7d | 80% | 4.2d | 2019-09-23 | 2019-10-16 | 21d | 2d | 0d |  | Construct | STR_01 | PLA |
| 31 | 1.1.4.6 | Columns Erection |  | 25d | 2019-10-11 | 2019-11-08 | 22FS-10d, 29, 30FS-4d |  |  | 2019-10-11 | 2019-11-08 | 25d | 2d | 0d |  | Construct | STR_01 | EXE |
| 32 | 1.1.4.7 | Main structural frames lifting |  | 21d | 2019-10-28 | 2019-11-20 | 31FS-10d |  |  | 2019-10-28 | 2019-11-20 | 21d | 2d | 0d |  | Construct | STR_02 | EXE |
| 33 | 1.1.4.8 | Perimeter structure beams installation |  | 26d | 2019-11-12 | 2019-12-11 | 48FS-17d |  |  | 2019-11-12 | 2019-12-11 | 26d | 0d |  |  | Construct | STR_03 | EXE |
| 34 | 1.1.5 | **Concrete Slabs** |  | 154d | 2019-08-22 A | 2020-02-10 |  | 30% | 107.44d | 2019-08-22 | 2020-02-10 | 154d | 21d |  |  |  |  |  |
| 35 | 1.1.5.1 | IFC Slabs drawings (Delivery By Client) | milestone | 0d | 2019-08-22 A | 2019-08-22 A | 3FS+20d | 100% |  | 2019-08-22 | 2019-08-22 |  |  |  |  | Construct | CON_01 | PLA |
| 36 | 1.1.5.2 | IFC Real delivery date | milestone | 0d | 2019-08-27 A | 2019-08-27 A | 35FS+5d | 100% |  | 2019-08-27 | 2019-08-27 |  |  |  |  | Construct | CON_01 | PLA |
| 37 | 1.1.5.3 | Slabs works contract definition |  | 14d | 2019-08-28 A | 2019-09-12 A | 36 | 100% |  | 2019-08-28 | 2019-09-12 | 14d |  |  |  | Construct | CON_01 | PLA |
| 38 | 1.1.5.4 | Perimeter Concrete Slabs |  | 30d | 2019-09-27 A | 2019-10-30 | 21FS-5d, 37, 10 | 40% | 18d | 2019-09-27 | 2019-10-30 | 30d | 0d |  |  | Construct | CON_01 | EXE |
| 39 | 1.1.5.5 | Central slab |  | 21d | 2019-12-25 | 2020-01-17 | 57 |  |  | 2019-12-25 | 2020-01-17 | 21d | 21d | 0d |  | Construct | CON_02 | EXE |
| 40 | 1.1.5.6 | Sealing joints |  | 21d | 2020-01-18 | 2020-02-10 | 39, 38 |  |  | 2020-01-18 | 2020-02-10 | 21d | 21d |  |  | Construct | CON_02 | EXE |
| 41 | 1.1.6 | **Titl-up walls** |  | 92d | 2019-08-20 A | 2019-11-30 |  | 36% | 58.46d | 2019-08-20 | 2019-11-30 | 92d | 0d |  |  |  |  |  |
| 42 | 1.1.6.1 | IFC Tiltups drawings (Delivery By Client) | milestone | 0d | 2019-08-20 A | 2019-08-20 A | 3FS+18d | 100% |  | 2019-08-20 | 2019-08-20 |  |  |  |  | Construct | TIL_01 | PLA |
| 43 | 1.1.6.2 | IFC Real delivery date | milestone | 0d | 2019-08-27 A | 2019-08-27 A | 42FS+7d | 100% |  | 2019-08-27 | 2019-08-27 |  |  |  |  | Construct | TIL_01 | PLA |
| 44 | 1.1.6.3 | Installation Crossings/ Oppening Definitions (By Client) | milestone | 0d | 2019-08-27 A | 2019-08-27 A | 42FS+7d | 100% |  | 2019-08-27 | 2019-08-27 |  |  |  |  | Construct | TIL_01 | PLA |
| 45 | 1.1.6.4 | Tilt-up Works contract |  | 14d | 2019-08-28 A | 2019-09-12 A | 43 | 100% |  | 2019-08-28 | 2019-09-12 | 14d |  |  |  | Construct | TIL_01 | PLA |
| 46 | 1.1.6.5 | Shop drawings |  | 21d | 2019-09-12 A | 2019-10-05 A | 45 | 100% |  | 2019-09-12 | 2019-10-05 | 21d |  |  |  | Construct | TIL_01 | PLA |
| 47 | 1.1.6.6 | tiltup-panel-wall |  | 38d | 2019-10-15 | 2019-11-26 | 38FS-14d, 46 |  |  | 2019-10-15 | 2019-11-26 | 38d | 0d |  |  | Construct | TIL_01 | EXE |
| 48 | 1.1.6.7 | lifting of walls |  | 23d | 2019-11-05 | 2019-11-30 | 47FS-5%, 23 |  |  | 2019-11-05 | 2019-11-30 | 23d | 0d |  |  | Construct | TIL_01 | EXE |

| ID | WBS | Task | Type | Duration | Start | Finish | Predecessors | Complete | Remaining | Baseline start | Baseline finish | Baseline duration | Total slack | Free slack | Constraint | Texto1 | Texto2 | Texto3 |
| --- | --- | --- | --- | --- | --- | --- | --- | --- | --- | --- | --- | --- | --- | --- | --- | --- | --- | --- |
| 49 | 1.1.7 | **Structural steel painting** |  | 37d | 2019-10-28 | 2019-12-09 |  |  |  | 2019-10-28 | 2019-12-09 | 37d | 2d |  |  |  |  |  |
| 50 | 1.1.7.1 | Central structrual steel paint |  | 21d | 2019-10-28 | 2019-11-20 | 32FS-21d |  |  | 2019-10-28 | 2019-11-20 | 21d | 2d | 0d |  | Construct | SSP_01 | EXE |
| 51 | 1.1.7.2 | Perimeter structural steel paint |  | 26d | 2019-11-09 | 2019-12-09 | 32FS-10d, 50FS-10d |  |  | 2019-11-09 | 2019-12-09 | 26d | 2d |  |  | Construct | SSP_02 | EXE |
| 52 | 1.1.8 | **Roof** |  | 135d | 2019-09-02 A | 2020-01-31 |  | 18% | 110.23d | 2019-09-02 | 2020-01-31 | 135d | 30d |  |  |  |  |  |
| 53 | 1.1.8.1 | IFC Roof drawings (Delivery By Client) | milestone | 0d | 2019-09-02 A | 2019-09-02 A | 3FS+30d | 100% |  | 2019-09-02 | 2019-09-02 |  |  |  |  | Construct | ROO_01 | PLA |
| 54 | 1.1.8.2 | No IFC drawings delivery date | milestone | 0d | 2019-09-09 A | 2019-09-09 A | 53FS+6d | 100% |  | 2019-09-09 | 2019-09-09 |  |  |  |  | Construct | ROO_01 | PLA |
| 55 | 1.1.8.3 | Roof works contract |  | 14d | 2019-09-09 A | 2019-09-24 A | 54 | 100% |  | 2019-09-09 | 2019-09-24 | 14d |  |  |  | Construct | ROO_01 | PLA |
| 56 | 1.1.8.4 | TPO and isulating material Supply |  | 60d | 2019-09-25 A | 2019-11-30 | 55 | 19% | 48.5d | 2019-09-25 | 2019-11-30 | 60d | 45d | 15d |  | Construct | ROO_01 | PLA |
| 57 | 1.1.8.5 | Lamination |  | 25d | 2019-11-27 | 2019-12-25 | 33FS-12d, 51FS-12d |  |  | 2019-11-27 | 2019-12-25 | 25d | 0d |  |  | Construct | ROO_01 | EXE |
| 58 | 1.1.8.6 | TPO works |  | 40d | 2019-12-18 | 2020-01-31 | 57FS-7d, 56 |  |  | 2019-12-18 | 2020-01-31 | 40d | 30d |  |  | Construct | ROO_01 | EXE |
| 59 | 1.1.9 | **Finishes** |  | 70d | 2019-12-18 | 2020-03-05 |  |  |  | 2019-12-18 | 2020-03-05 | 70d | 0d |  |  |  |  |  |
| 60 | 1.1.9.1 | Wall painting |  | 49d | 2019-12-18 | 2020-02-10 | 48, 57FS-7d |  |  | 2019-12-18 | 2020-02-10 | 49d | 0d |  |  | Construct | FIN_01 | EXE |
| 61 | 1.1.9.2 | Miscellaneous (doors , windows, Courtains ) |  | 38d | 2020-01-22 | 2020-03-05 | 60FS-17d, 57FS-17d |  |  | 2020-01-22 | 2020-03-05 | 38d | 0d |  |  | Construct | FIN_02 | EXE |
| 62 | 1.1.10 | **Rampas Area** |  | 50d | 2019-11-30 | 2020-01-25 |  |  |  | 2019-11-30 | 2020-01-25 | 50d | 35d |  |  |  |  |  |
| 63 | 1.1.10.1 | Vertical Storing Docks and Accesories |  | 50d | 2019-11-30 | 2020-01-25 | 48 |  |  | 2019-11-30 | 2020-01-25 | 50d | 35d |  |  | Construct | RAM_01 | EXE |
| 64 | 1.2 | **Parking lot & Exterior works** |  | 205.5d | 2019-07-19 A | 2020-03-05 |  | 25% | 154.88d | 2019-07-19 | 2020-03-05 | 205.5d | 3d |  |  |  |  |  |
| 65 | 1.2.1 | **EARTH MOVEMENTS** |  | 110.5d | 2019-07-31 A | 2019-11-30 |  | 63% | 41.44d | 2019-07-31 | 2019-11-30 | 110.5d | 29.5d |  |  |  |  |  |
| 66 | 1.2.1.1 | Superficial Site Scaryfing |  | 20d | 2019-07-31 A | 2019-08-22 A | 3 | 100% |  | 2019-07-31 | 2019-08-22 | 20d |  |  |  | Construct |  | EXE |
| 67 | 1.2.1.2 | Subgrane with turucuguay quarry material |  | 30d | 2019-08-14 A | 2019-09-17 A | 66FS-7d | 100% |  | 2019-08-14 | 2019-09-17 | 30d |  |  |  | Construct |  | EXE |
| 68 | 1.2.1.3 | Hydraulic Base with |  | 30d | 2019-10-29 | 2019-11-30 | 67, 73FS-10d, 75FS-10d |  |  | 2019-10-29 | 2019-11-30 | 30d | 29.5d | 0d |  | Construct |  | EXE |
| 69 | 1.2.2 | **Drainage of pluvial water.** |  | 101d | 2019-07-19 A | 2019-11-08 |  | 72% | 28.54d | 2019-07-19 | 2019-11-08 | 101d | 29.5d |  |  |  |  |  |
| 70 | 1.2.2.1 | IFC Roof drawings (Delivery By Client) | milestone | 0d | 2019-07-19 A | 2019-07-19 A |  | 100% |  | 2019-07-19 | 2019-07-19 |  |  |  | start no earlier than 2019-07-19 | Construct | DRA_01 | PLA |
| 71 | 1.2.2.2 | Works contract nad Pipe supply |  | 14d | 2019-07-19 A | 2019-08-03 A | 70 | 100% |  | 2019-07-19 | 2019-08-03 | 14d |  |  |  | Construct | DRA_01 | PLA |
| 72 | 1.2.2.3 | Drainage of pluvial water. Line No.1 Cedis |  | 45d | 2019-08-06 A | 2019-09-25 A | 71FS+2d | 100% |  | 2019-08-06 | 2019-09-25 | 45d |  |  |  | Construct | DRA_01 | EXE |
| 73 | 1.2.2.4 | Drainage of pluvial water. Line No.2 Cedis |  | 40d | 2019-09-18 A | 2019-11-02 | 72FS-6d | 43% | 23d | 2019-09-18 | 2019-11-02 | 40d | 35.5d | 6d |  | Construct | DRA_01 | EXE |
| 74 | 1.2.2.5 | Drainage of pluvial water. Line No.1 Shell |  | 45d | 2019-08-06 A | 2019-09-25 A | 71FS+2d | 100% |  | 2019-08-06 | 2019-09-25 | 45d |  |  |  | Construct | DRA_01 | EXE |
| 75 | 1.2.2.6 | Drainage of pluvial water. Line No.2 Shell |  | 40d | 2019-09-25 A | 2019-11-08 | 74 | 28% | 29d | 2019-09-25 | 2019-11-08 | 40d | 29.5d | 0d |  | Construct | DRA_01 |  |

| ID | WBS | Task | Duration | Start | Finish | Predecessors | Complete | Remaining | Baseline start | Baseline finish | Baseline duration | Total slack | Free slack | Texto1 | Texto2 | Texto3 |
| --- | --- | --- | --- | --- | --- | --- | --- | --- | --- | --- | --- | --- | --- | --- | --- | --- |
| 76 | 1.2.3 | **Concrete paving** | 48d | 2019-11-20 | 2020-01-13 |  |  |  | 2019-11-20 | 2020-01-13 | 48d | 29.5d |  |  |  |  |
| 77 | 1.2.3.1 | Hydraulic Concrete Pavement | 27d | 2019-11-20 | 2019-12-20 | 68FS-10d |  |  | 2019-11-20 | 2019-12-20 | 27d | 29.5d | 0d | Construct | CPA_01 | EXE |
| 78 | 1.2.3.2 | Joints Sealing | 21d | 2019-12-20 | 2020-01-13 | 77 |  |  | 2019-12-20 | 2020-01-13 | 21d | 29.5d | 0d | Construct | CPA_01 | EXE |
| 79 | 1.2.4 | **Curbs and Sidewalks** | 48d | 2019-12-02 | 2020-01-24 |  |  |  | 2019-12-02 | 2020-01-24 | 48d | 39.5d |  |  |  |  |
| 80 | 1.2.4.1 | Curbs and Sidewalks | 48d | 2019-12-02 | 2020-01-24 | 68 |  |  | 2019-12-02 | 2020-01-24 | 48d | 39.5d | 36.5d | Construct | CYS_01 | EXE |
| 81 | 1.2.5 | **Signage** | 27d | 2020-01-04 | 2020-02-04 |  |  |  | 2020-01-04 | 2020-02-04 | 27d | 29.5d |  |  |  |  |
| 82 | 1.2.5.1 | Pavement signage | 27d | 2020-01-04 | 2020-02-04 | 78FS-7d |  |  | 2020-01-04 | 2020-02-04 | 27d | 29.5d | 26.5d | Construct | SIG_01 | EXE |
| 83 | 1.2.6 | **Electrica Room** | 147d | 2019-09-17 A | 2020-02-28 |  | 12% | 129.71d | 2019-09-17 | 2020-02-28 | 147d | 8d |  |  |  |  |
| 84 | 1.2.6.1 | Earth Movements | 14d | 2019-09-17 A | 2019-10-02 A | 67 | 100% |  | 2019-09-17 | 2019-10-02 | 14d |  |  | Construct | ELE_01 | EXE |
| 85 | 1.2.6.2 | Foundations | 14d | 2019-11-27 | 2019-12-13 | 84FS-3d, 48FS-3d |  |  | 2019-11-27 | 2019-12-13 | 14d | 8d | 0d | Construct | ELE_02 | EXE |
| 86 | 1.2.6.3 | Piping the Undergrounding | 14d | 2019-12-07 | 2019-12-23 | 85FS-5d |  |  | 2019-12-07 | 2019-12-23 | 14d | 8d | 0d | Construct | ELE_03 | EXE |
| 87 | 1.2.6.4 | Concretec slabs | 7d | 2019-12-23 | 2019-12-31 | 86 |  |  | 2019-12-23 | 2019-12-31 | 7d | 8d | 0d | Construct | ELE_04 | EXE |
| 88 | 1.2.6.5 | Walls | 21d | 2019-12-31 | 2020-01-23 | 87 |  |  | 2019-12-31 | 2020-01-23 | 21d | 8d | 0d | Construct | ELE_05 | EXE |
| 89 | 1.2.6.6 | Structural | 14d | 2020-01-20 | 2020-02-05 | 88FS-3d |  |  | 2020-01-20 | 2020-02-05 | 14d | 8d | 0d | Construct | ELE_06 | EXE |
| 90 | 1.2.6.7 | Roof | 7d | 2020-02-05 | 2020-02-12 | 89 |  |  | 2020-02-05 | 2020-02-12 | 7d | 8d | 0d | Construct | ELE_07 | EXE |
| 91 | 1.2.6.8 | Finishes | 14d | 2020-02-13 | 2020-02-28 | 90 |  |  | 2020-02-13 | 2020-02-28 | 14d | 8d | 5d | Construct | ELE_08 | EXE |
| 92 | 1.2.6.9 | Miscellaneous (doors , windows ) | 14d | 2020-02-13 | 2020-02-28 | 90 |  |  | 2020-02-13 | 2020-02-28 | 14d | 8d | 5d | Construct | ELE_09 | EXE |
| 93 | 1.2.7 | **Pump Room** | 138d | 2019-10-02 A | 2020-03-05 |  | 4% | 132.78d | 2019-10-02 | 2020-03-05 | 138d | 3d |  |  |  |  |
| 94 | 1.2.7.1 | Earth Movements | 14d | 2019-10-02 A | 2019-10-18 | 84 | 32% | 9.5d | 2019-10-02 | 2019-10-18 | 14d | 21d | 0d | Construct | PUM_01 | EXE |
| 95 | 1.2.7.2 | Foundations | 14d | 2019-11-27 | 2019-12-13 | 94FS-3d, 48FS-3d |  |  | 2019-11-27 | 2019-12-13 | 14d | 3d | 0d | Construct | PUM_02 | EXE |
| 96 | 1.2.7.3 | Piping the Undergrounding | 14d | 2019-12-11 | 2019-12-26 | 95FS-2d |  |  | 2019-12-11 | 2019-12-26 | 14d | 3d | 0d | Construct | PUM_03 | EXE |
| 97 | 1.2.7.4 | Concretec slabs | 7d | 2019-12-26 | 2020-01-03 | 96 |  |  | 2019-12-26 | 2020-01-03 | 7d | 3d | 0d | Construct | PUM_04 | EXE |
| 98 | 1.2.7.5 | Walls | 21d | 2020-01-03 | 2020-01-27 | 97 |  |  | 2020-01-03 | 2020-01-27 | 21d | 3d | 0d | Construct | PUM_05 | EXE |
| 99 | 1.2.7.6 | Structural | 14d | 2020-01-25 | 2020-02-10 | 98FS-1d |  |  | 2020-01-25 | 2020-02-10 | 14d | 3d | 0d | Construct | PUM_06 | EXE |
| 100 | 1.2.7.7 | Roof | 7d | 2020-02-11 | 2020-02-18 | 99 |  |  | 2020-02-11 | 2020-02-18 | 7d | 3d | 0d | Construct | PUM_07 | EXE |
| 101 | 1.2.7.8 | Finishes | 14d | 2020-02-18 | 2020-03-05 | 100 |  |  | 2020-02-18 | 2020-03-05 | 14d | 3d | 0d | Construct | PUM_08 | EXE |
| 102 | 1.2.7.9 | Miscellaneous (doors , windows ) | 14d | 2020-02-18 | 2020-03-05 | 100 |  |  | 2020-02-18 | 2020-03-05 | 14d | 3d | 0d | Construct | PUM_09 | EXE |

| ID | WBS | Task | Type | Duration | Start | Finish | Predecessors | Baseline start | Baseline finish | Baseline duration | Total slack | Free slack | Texto1 | Texto3 | Texto2 |
| --- | --- | --- | --- | --- | --- | --- | --- | --- | --- | --- | --- | --- | --- | --- | --- |
| 103 | 1.2.8 | **Guard House Construction** |  | 64d | 2019-10-18 | 2019-12-28 |  | 2019-10-18 | 2019-12-28 | 64d | 21d |  |  |  |  |
| 104 | 1.2.8.1 | Earth Movements |  | 7d | 2019-10-18 | 2019-10-25 | 84, 94 | 2019-10-18 | 2019-10-25 | 7d | 21d | 0d | Construct | EXE |  |
| 105 | 1.2.8.2 | Piping the Undergrounding |  | 7d | 2019-10-26 | 2019-11-02 | 104 | 2019-10-26 | 2019-11-02 | 7d | 21d | 0d | Construct | EXE |  |
| 106 | 1.2.8.3 | Concretec slabs |  | 7d | 2019-11-02 | 2019-11-11 | 105 | 2019-11-02 | 2019-11-11 | 7d | 21d | 0d | Construct | EXE | GHC_01 |
| 107 | 1.2.8.4 | Walls |  | 14d | 2019-11-11 | 2019-11-26 | 106 | 2019-11-11 | 2019-11-26 | 14d | 21d | 0d | Construct | EXE | GHC_02 |
| 108 | 1.2.8.5 | Structure |  | 14d | 2019-11-20 | 2019-12-05 | 107FS-6d | 2019-11-20 | 2019-12-05 | 14d | 21d | 0d | Construct | EXE | GHC_03 |
| 109 | 1.2.8.6 | Roof |  | 7d | 2019-12-05 | 2019-12-13 | 108 | 2019-12-05 | 2019-12-13 | 7d | 21d | 0d | Construct | EXE | GHC_04 |
| 110 | 1.2.8.7 | Finishes |  | 14d | 2019-12-13 | 2019-12-28 | 109 | 2019-12-13 | 2019-12-28 | 14d | 21d | 0d | Construct | EXE | GHC_05 |
| 111 | 1.2.8.8 | Miscellaneous (doors , windows ) |  | 14d | 2019-12-13 | 2019-12-28 | 109 | 2019-12-13 | 2019-12-28 | 14d | 63d | 60d | Construct | EXE | GHC_05 |
| 112 | 1.2.8.9 | Vehicular Barrier |  | 7d | 2019-12-13 | 2019-12-20 | 109 | 2019-12-13 | 2019-12-20 | 7d | 70d | 67d | Construct | EXE | GHC_06 |
| 113 | 1.2.9 | **Perimetral Fences** |  | 42d | 2019-12-28 | 2020-02-13 |  | 2019-12-28 | 2020-02-13 | 42d | 21d |  |  |  |  |
| 114 | 1.2.9.1 | Fence Rejacero |  | 14d | 2019-12-28 | 2020-01-13 | 110 | 2019-12-28 | 2020-01-13 | 14d | 21d | 0d | Construct | EXE | PER_01 |
| 115 | 1.2.9.2 | Fence Decorative |  | 21d | 2020-01-14 | 2020-02-06 | 114 | 2020-01-14 | 2020-02-06 | 21d | 21d | 0d | Construct | EXE | PER_02 |
| 116 | 1.2.9.3 | Doors Rejacero |  | 14d | 2020-01-14 | 2020-01-29 | 114 | 2020-01-14 | 2020-01-29 | 14d | 35d | 32d | Construct | EXE | PER_03 |
| 117 | 1.2.9.4 | Doors Decorative |  | 7d | 2020-02-06 | 2020-02-13 | 115 | 2020-02-06 | 2020-02-13 | 7d | 21d | 18d | Construct | EXE | PER_04 |
| 118 | 1.2.10 | **Land Scaping** |  | 42d | 2019-12-28 | 2020-02-13 |  | 2019-12-28 | 2020-02-13 | 42d | 21d |  |  |  |  |
| 119 | 1.2.10.1 | Irrigation system |  | 21d | 2019-12-28 | 2020-01-21 | 110 | 2019-12-28 | 2020-01-21 | 21d | 21d | 0d | Construct | EXE |  |
| 120 | 1.2.10.2 | Native Lanscaping |  | 21d | 2020-01-21 | 2020-02-13 | 119 | 2020-01-21 | 2020-02-13 | 21d | 21d | 18d | Construct | EXE |  |
| 121 | 1.3 | Sustantial Occupancy of the Building | milestone | 0d | 2020-03-05 | 2020-03-05 | 63, 61, 39, 40, 58 | 2020-03-05 | 2020-03-05 |  | 0d |  | Construct | PLA |  |
| 122 | 1.4 | Sustantial Occupancy of the Exterior | milestone | 0d | 2020-03-05 | 2020-03-05 | 80, 82, 91, 92, 101, 102, 111, 112, 116, 117, 120 | 2020-03-05 | 2020-03-05 |  | 3d |  | Construct | PLA |  |
| 123 | 1.5 | Punch list |  | 23d | 2020-03-09 | 2020-04-03 | 121FS+3d, 122 | 2020-03-09 | 2020-04-03 | 23d | 0d |  | Construct | PLA |  |
| 124 | 1.6 | Final completion | milestone | 0d | 2020-04-03 | 2020-04-03 | 123 | 2020-04-03 | 2020-04-03 |  | 0d |  | Construct | PLA |  |
