# Programa Prologis El Florido junio 2019

Schedule from MS Project XML, 2019-06-05 to 2020-03-09, status date 2019-08-31, A marks actual dates.
Hermosillo y Asociados

## Calendars

- Standard: Mon-Fri 08:00-12:00, 13:00-17:00; Sat 08:00-12:00; Sun off.

## Schedule

| ID | WBS | Task | Type | Duration | Start | Finish | Predecessors | Complete | Remaining | Total slack | Free slack | Constraint | Deadline | ACTUAL COMPLETED | SIMCODE | Texto3 | Texto4 | Número1 |
| --- | --- | --- | --- | --- | --- | --- | --- | --- | --- | --- | --- | --- | --- | --- | --- | --- | --- | --- |
| 1 | 1 | **Prologis Park El Florido BLDG 1** |  | 219d | 2019-06-05 A | 2020-03-09 |  | 13% | 191.05d | 0d |  |  |  | 13% | Simulation | Tipo de tarea | Task Type | 279 |
| 2 | 1.1 | **Contract** |  | 1d | 2019-06-05 A | 2019-06-05 A |  | 100% |  |  |  |  |  | 100% |  |  |  | 1 |
| 3 | 1.1.1 | Contract Signed |  | 1d | 2019-06-05 A | 2019-06-05 A |  | 100% |  |  |  |  |  | 100% |  | PLA |  | 1 |
| 4 | 1.2 | **Permitting - Construction License** |  | 77d | 2019-06-10 A | 2019-09-16 |  | 92% | 6.02d | 132d |  |  |  | 86% |  | PLA |  | 98 |
| 5 | 1.2.1 | Property´s documents by Owner (land tax-predial, ownership, feasibilities, |  | 10d | 2019-06-10 A | 2019-06-21 A | 3FS+3d | 100% |  |  |  |  |  | 100% |  | PLA |  | 12 |
| 6 | 1.2.2 | Lot fusion , F2 Document fraccionamiento | milestone | 0d | 2019-07-01 A | 2019-07-01 A | 3FS+20d | 100% |  |  |  |  |  | 100% |  | PLA |  |  |
| 7 | 1.2.3 | Land Use License |  | 10d | 2019-06-13 A | 2019-06-26 A | 5SS+3d | 100% |  |  |  |  |  | 100% |  | PLA |  | 13 |
| 8 | 1.2.4 | Official Number and Property´s Bounderies |  | 5d | 2019-06-18 A | 2019-06-24 A | 5SS+6d | 100% |  |  |  |  |  | 100% |  | PLA |  | 7 |
| 9 | 1.2.5 | water and sewage feasibility of service |  | 6d | 2019-06-18 A | 2019-06-25 A | 8SS | 100% |  |  |  |  |  | 100% |  | PLA |  | 8 |
| 10 | 1.2.6 | Environmental Impact Assessment (if needed) |  | 30d | 2019-06-12 A | 2019-07-19 A | 5SS+2d | 100% |  |  |  |  |  | 100% |  | PLA |  | 38 |
| 11 | 1.2.7 | Civil Protection/Fire Marshall |  | 20d | 2019-06-22 A | 2019-07-17 A | 5, 17SS+6d | 100% |  |  |  |  |  | 100% |  | PLA |  | 26 |
| 12 | 1.2.8 | Project Approval by Industrial Park |  | 6d | 2019-06-19 A | 2019-06-26 A | 7SS, 17SS+10d | 100% |  |  |  |  |  | 100% |  | PLA |  | 8 |
| 13 | 1.2.9 | Temporally Mass Grading Permit |  | 20d | 2019-07-02 A | 2019-07-26 A | 7, 5, 17SS+10d, 6, 10SS, 12 | 100% |  |  |  |  |  | 100% |  | PLA |  | 25 |
| 14 | 1.2.10 | Construction License |  | 40d | 2019-07-26 A | 2019-09-16 | 17, 10, 11 | 71% | 11.5d | 132d | 25d |  |  | 71% |  | PLA |  | 52 |
| 15 | 1.3 | **CONSTRUCTION** |  | 211d | 2019-06-06 A | 2020-02-28 |  | 9% | 191.63d | 7d |  |  |  | 9% |  |  |  | 268 |
| 16 | 1.3.1 | **Enginnering** |  | 80d | 2019-06-06 A | 2019-09-16 |  | 94% | 5.11d | 138d |  |  |  | 93% |  |  |  | 103 |
| 17 | 1.3.1.1 | 30% shell design progress |  | 40d | 2019-06-06 A | 2019-07-26 A | 3 | 100% |  |  |  |  |  | 100% |  | PLA |  | 51 |
| 18 | 1.3.1.2 | 60 % shell design progress |  | 60d | 2019-06-06 A | 2019-08-21 A | 17SS | 100% |  |  |  | start no earlier than 2013-02-20 |  | 100% |  | PLA |  | 77 |
| 19 | 1.3.1.3 | 90% shell design progress |  | 80d | 2019-06-06 A | 2019-09-16 | 17SS | 86% | 11.5d | 138d |  | start no earlier than 2013-02-20 |  | 85% |  | PLA |  | 103 |
| 20 | 1.3.2 | **Building Pad Grading** |  | 148d | 2019-07-26 A | 2020-01-30 |  | 36% | 95.28d | 5d |  |  |  | 28% |  |  |  | 189 |
| 21 | 1.3.2.1 | Platform Fill with imported Materials |  | 45d | 2019-07-26 A | 2019-09-21 | 17SS+10d, 13SS+20d | 63% | 16.5d | -1890d | 0d |  | 2013-02-19 | 50% |  | EXE |  | 57 |
| 22 | 1.3.2.2 | Crushed base / bldg pad |  | 35d | 2019-12-18 | 2020-01-30 | 43SS+6d |  |  | 5d | 0d |  |  | 0% |  | EXE |  | 44 |
| 23 | 1.3.3 | **Foundation** |  | 57d | 2019-08-28 A | 2019-11-07 |  | 9% | 51.64d | 96d |  |  |  | 22% |  |  |  | 72 |
| 24 | 1.3.3.1 | Spread footings |  | 40d | 2019-08-28 A | 2019-10-17 | 21SS+25d, 14SS | 9% | 36.5d | 13d | 0d |  |  | 35% | FOU_01 | EXE | Construct | 51 |
| 25 | 1.3.3.2 | Contineous footing |  | 45d | 2019-09-12 A | 2019-11-07 | 24SS+12d | 10% | 40.5d | 96d | 29d |  |  | 10% | FOU_02 | EXE | Construct | 57 |

| ID | WBS | Task | Duration | Start | Finish | Predecessors | Complete | Remaining | Total slack | Free slack | Constraint | ACTUAL COMPLETED | Número1 | SIMCODE | Texto3 | Texto4 |
| --- | --- | --- | --- | --- | --- | --- | --- | --- | --- | --- | --- | --- | --- | --- | --- | --- |
| 26 | 1.3.4 | **Slab on grade/ cast in bed** | 118d | 2019-09-16 | 2020-02-12 |  |  |  | 0d |  |  | 0% | 150 |  |  |  |
| 27 | 1.3.4.1 | **1st Phase** | 22d | 2019-09-16 | 2019-10-14 |  |  |  | 0d |  |  | 0% | 28 |  |  |  |
| 28 | 1.3.4.1.1 | Fine tune | 20d | 2019-09-16 | 2019-10-10 | 24SS+15d |  |  | 0d |  |  | 0% | 25 | SLA_01 | EXE | Construct |
| 29 | 1.3.4.1.2 | Pouring concrete | 20d | 2019-09-18 | 2019-10-14 | 24SS-4d, 28SS+2d |  |  | 0d |  |  | 0% | 26 | SLA_01 | EXE | Construct |
| 30 | 1.3.4.2 | **2nd Phase** | 44d | 2019-12-19 | 2020-02-12 |  |  |  | 1d |  |  | 0% | 56 |  |  |  |
| 31 | 1.3.4.2.1 | Fine tune | 35d | 2019-12-19 | 2020-01-31 | 43SS+6d, 63SS, 22SS+1d |  |  | 5d | 0d |  | 0% | 44 | SLA_01 | EXE | Construct |
| 32 | 1.3.4.2.2 | Rebar | 35d | 2019-12-21 | 2020-02-04 | 31SS+2d |  |  | 6d | 5d |  | 0% | 46 | SLA_01 | EXE | Construct |
| 33 | 1.3.4.2.3 | Sewage lines | 35d | 2019-12-19 | 2020-01-31 | 31SS |  |  | 5d | 4d |  | 0% | 44 | SLA_01 | EXE | Construct |
| 34 | 1.3.4.2.4 | Pouring concrete | 40d | 2019-12-24 | 2020-02-12 | 33SS, 32FF+2d, 63FF+2d, 22SS |  |  | 1d | 0d |  | 0% | 51 | SLA_01 | EXE | Construct |
| 35 | 1.3.5 | **Tilt up walls** | 168d | 2019-07-26 A | 2020-02-25 |  | 9% | 153.3d | 10d |  |  | 9% | 215 |  |  |  |
| 36 | 1.3.5.1 | wood forms | 40d | 2019-09-25 | 2019-11-14 | 29SS+5d |  |  | 0d |  | start no earlier than 2000-08-01 | 0% | 51 | TIL_01 | PLA | Construct |
| 37 | 1.3.5.2 | Re-bar lifting design | 20d | 2019-07-26 A | 2019-08-21 A | 18SS+15d, 17 | 100% |  |  |  |  | 100% | 26 | TIL_01 | PLA | Construct |
| 38 | 1.3.5.3 | Embed materials | 20d | 2019-08-08 A | 2019-09-03 | 37SS+10d | 93% | 1.5d | 148d |  |  | 90% | 26 | TIL_01 | PLA | Construct |
| 39 | 1.3.5.4 | Re-bar fabrication | 60d | 2019-09-10 | 2019-11-25 | 37SS+3d, 36FF+8d |  |  | 0d |  |  | 0% | 77 | TIL_01 | PLA | Construct |
| 40 | 1.3.5.5 | Concrete pouring | 45d | 2019-10-07 | 2019-12-02 | 39FF+6d, 37FS+2d |  |  | 0d |  |  | 0% | 57 | TIL_01 | EXE | Construct |
| 41 | 1.3.5.6 | Lifting panels | 30d | 2019-11-07 | 2019-12-14 | 40FF+10d, 25SS+15d |  |  | 0d |  |  | 0% | 38 | TIL_01 | EXE | Construct |
| 42 | 1.3.5.7 | Pour concrete under the tilp up wall | 25d | 2019-11-23 | 2019-12-25 | 41FF+8d |  |  | 5d | 0d |  | 0% | 33 | TIL_01 | EXE | Construct |
| 43 | 1.3.5.8 | Perimetral backfill edge with gravel | 20d | 2019-12-10 | 2020-01-03 | 42FF+8d |  |  | 5d | 0d |  | 0% | 25 | TIL_01 | EXE | Construct |
| 44 | 1.3.5.9 | Sack and patch | 45d | 2019-11-13 | 2020-01-09 | 41SS+5d |  |  | 18d | 0d |  | 0% | 57 | TIL_01 | EXE | Construct |
| 45 | 1.3.5.10 | calking and sealing joint | 45d | 2019-11-21 | 2020-01-16 | 44FF+6d |  |  | 18d | 2d |  | 0% | 57 | TIL_01 | EXE | Construct |
| 46 | 1.3.5.11 | Interior paint | 45d | 2019-12-23 | 2020-02-18 | 45SS+6d, 63SS, 34FF+4d |  |  | 1d | 0d |  | 0% | 57 | TIL_01 | EXE | Construct |
| 47 | 1.3.5.12 | Exterior paint | 45d | 2019-12-31 | 2020-02-25 | 45SS+7d, 46FF+6d |  |  | 1d | 0d |  | 0% | 57 | TIL_01 | EXE | Construct |
| 48 | 1.3.6 | **Steel structure** | 165d | 2019-07-08 A | 2020-02-03 |  | 12% | 144.71d | 1d |  |  | 12% | 210 |  |  |  |
| 49 | 1.3.6.1 | Material on shop | 45d | 2019-07-08 A | 2019-09-03 | 18FF+10d | 97% | 1.5d | 4.5d | 0d |  | 95% | 57 | STE_01 | PLA |  |
| 50 | 1.3.6.2 | Columns fabrication | 30d | 2019-09-03 A | 2019-10-10 | 49 | 15% | 25.5d | 18d | 0d |  | 15% | 38 |  | EXE |  |
| 51 | 1.3.6.3 | Girder fabrication | 55d | 2019-09-06 A | 2019-11-15 | 50SS+3d, 49SS | 10% | 49.5d | 28d | 0d |  | 10% | 70 |  | EXE |  |
| 52 | 1.3.6.4 | material deliverd on site | 50d | 2019-09-26 | 2019-11-28 | 51FF+10d |  |  | 28d |  |  | 0% | 64 | STE_01 | PLA |  |
| 53 | 1.3.6.5 | Columns erection | 35d | 2019-11-04 | 2019-12-17 | 29, 50, 24, 52SS+2d, 41FF+2d |  |  | 0d |  |  | 0% | 44 | STE_01 | EXE | Construct |
| 54 | 1.3.6.6 | beam erection | 50d | 2019-11-08 | 2020-01-10 | 51SS+8d, 53SS+4d, 41FF+10d |  |  | 0d |  |  | 0% | 64 | STE_02 | EXE | Construct |
| 55 | 1.3.6.7 | purlins installation | 50d | 2019-11-14 | 2020-01-16 | 54FF+5d |  |  | 0d |  |  | 0% | 64 | STE_03 | EXE | Construct |
| 56 | 1.3.6.8 | accessories and detailing | 50d | 2019-11-25 | 2020-01-27 | 55FF+8d |  |  | 0d |  |  | 0% | 64 | STE_04 | EXE | Construct |
| 57 | 1.3.6.9 | Paint on structure | 50d | 2019-12-02 | 2020-02-03 | 56FF+5d, 54SS |  |  | 0d |  |  | 0% | 64 |  | EXE |  |
| 58 | 1.3.6.10 | to remove tilt braces | 20d | 2019-12-26 | 2020-01-21 | 54FF+8d, 56SS+10d |  |  | 11d | 0d |  | 0% | 26 |  | EXE |  |

| ID | WBS | Task | Type | Duration | Start | Finish | Predecessors | Total slack | Free slack | ACTUAL COMPLETED | Número1 | SIMCODE | Texto3 | Texto4 |
| --- | --- | --- | --- | --- | --- | --- | --- | --- | --- | --- | --- | --- | --- | --- |
| 59 | 1.3.7 | **Roof system** |  | 71d | 2019-11-19 | 2020-02-18 |  | 11d |  | 0% | 91 |  |  |  |
| 60 | 1.3.7.1 | Sheet metal on site | milestone | 0d | 2019-11-19 | 2019-11-19 | 55SS+4d | 11d |  | 0% |  | ROO_01 | PLA |  |
| 61 | 1.3.7.2 | forming sheet panels on site |  | 50d | 2019-12-04 | 2020-02-05 | 56SS+3d, 60, 57FF+2d | 0d |  | 0% | 64 | ROO_01 | PLA |  |
| 62 | 1.3.7.3 | fiber glass installation |  | 50d | 2019-12-06 | 2020-02-07 | 61FF+2d | 0d |  | 0% | 64 | ROO_01 | PLA |  |
| 63 | 1.3.7.4 | sheet metal installation |  | 51d | 2019-12-07 | 2020-02-10 | 62FF+2d | 0d |  | 0% | 66 | ROO_01 | EXE | Construct |
| 64 | 1.3.7.5 | gutter and flashing installation |  | 50d | 2019-12-16 | 2020-02-17 | 63FF+5d | 17d | 1d | 0% | 64 | ROO_02 | EXE | Construct |
| 65 | 1.3.7.6 | polycarbinate skyligt domes |  | 55d | 2019-12-10 | 2020-02-18 | 63FF+6d, 64FF | 16d | 0d | 0% | 70 | ROO_03 | EXE | Construct |
| 66 | 1.3.8 | **Equipment/utilities** |  | 53d | 2019-12-12 | 2020-02-18 |  | 16d |  | 0% | 68 |  |  |  |
| 67 | 1.3.8.1 | Dock pits |  | 30d | 2019-12-26 | 2020-02-03 | 41FS+5d, 58SS | 11d | 1d | 0% | 39 |  | EXE |  |
| 68 | 1.3.8.2 | dock levelers installation |  | 20d | 2020-01-20 | 2020-02-13 | 67FF+8d, 34FF+1d | 10d | 0d | 0% | 25 | EQU_01 | EXE | Construct |
| 69 | 1.3.8.3 | overhead door installtion |  | 20d | 2020-01-21 | 2020-02-14 | 67FF+8d, 68FF+1d | 10d | 0d | 0% | 25 | EQU_02 | EXE | Construct |
| 70 | 1.3.8.4 | dock seal and bumpers |  | 20d | 2020-01-22 | 2020-02-17 | 68FF+2d, 69FF+1d | 10d | 1d | 0% | 26 |  | EXE |  |
| 71 | 1.3.8.5 | aluminium and glassing |  | 40d | 2019-12-30 | 2020-02-18 | 72FF+3d | 16d | 0d | 0% | 51 | EQU_03 | EXE | Construct |
| 72 | 1.3.8.6 | Main entrance façade |  | 50d | 2019-12-12 | 2020-02-13 | 45FF+20d, 63FF+3d | 16d | 0d | 0% | 64 | EQU_04 | EXE | Construct |
| 73 | 1.3.9 | **Electrical Installation** |  | 141d | 2019-09-03 | 2020-02-28 |  | 7d |  | 0% | 179 |  |  |  |
| 74 | 1.3.9.1 | Delivery time of transformer |  | 75d | 2019-09-10 | 2019-12-13 | 17FS+35d | 10d | 0d | 0% | 95 |  | PLA |  |
| 75 | 1.3.9.2 | Delivery time of panel |  | 60d | 2019-09-10 | 2019-11-25 | 17FS+35d | 15d | 7d | 0% | 77 |  | PLA |  |
| 76 | 1.3.9.3 | Delivery time of lamps |  | 45d | 2019-09-10 | 2019-11-05 | 17FS+35d | 98d |  | 0% | 57 |  | PLA |  |
| 77 | 1.3.9.4 | Grounding system |  | 35d | 2019-09-03 | 2019-10-17 | 24SS+5d | 113d |  | 0% | 44 |  | EXE |  |
| 78 | 1.3.9.5 | Substation |  | 25d | 2019-11-22 | 2019-12-24 | 74FF+8d | 60d |  | 0% | 33 |  | EXE |  |
| 79 | 1.3.9.6 | Low voltage panels |  | 50d | 2019-12-26 | 2020-02-27 | 74, 63SS+15d, 75 | 0d |  | 0% | 64 |  | EXE |  |
| 80 | 1.3.9.7 | Secondary feeders |  | 60d | 2019-12-04 | 2020-02-18 | 75, 63FF+6d | 8d | 0d | 0% | 77 |  | EXE |  |
| 81 | 1.3.9.8 | Exterior lighting |  | 50d | 2019-12-27 | 2020-02-28 | 79FF+1d | 0d |  | 0% | 64 |  | EXE |  |
| 82 | 1.3.9.9 | Mechanical feeders |  | 55d | 2019-12-17 | 2020-02-24 | 80FF+5d | 8d | 0d | 0% | 70 |  | EXE |  |
| 83 | 1.3.9.10 | Telephone / cctv system |  | 45d | 2020-01-02 | 2020-02-27 | 82FF+3d | 8d |  | 0% | 57 |  | EXE |  |

| ID | WBS | Task | Duration | Start | Finish | Predecessors | Total slack | Free slack | ACTUAL COMPLETED | Número1 | Texto3 |
| --- | --- | --- | --- | --- | --- | --- | --- | --- | --- | --- | --- |
| 84 | 1.3.10 | **Fire Protection System** | 49d | 2019-12-26 | 2020-02-26 |  | 2d |  | 0% | 63 |  |
| 85 | 1.3.10.1 | Piping, raiser , hose cabinets | 45d | 2019-12-26 | 2020-02-21 | 57SS+20d, 63SS+15d | 2d | 0d | 0% | 57 | EXE |
| 86 | 1.3.10.2 | Fire Alarms | 25d | 2020-01-27 | 2020-02-26 | 85FF+4d | 2d |  | 0% | 31 | EXE |
| 87 | 1.3.11 | **Hvac Installation** | 39d | 2020-01-09 | 2020-02-27 |  | 1d |  | 0% | 50 |  |
| 88 | 1.3.11.1 | Louver installations | 30d | 2020-01-09 | 2020-02-17 | 47SS+8d | 1d | 0d | 0% | 39 | EXE |
| 89 | 1.3.11.2 | Equipment installation | 25d | 2020-01-28 | 2020-02-27 | 88SS+14d | 1d |  | 0% | 31 | EXE |
| 90 | 1.3.12 | **Exterior works** | 141d | 2019-09-03 | 2020-02-28 |  | 0d |  | 0% | 179 |  |
| 91 | 1.3.12.1 | Sewage main lines | 60d | 2019-11-06 | 2020-01-21 | 97SS+50d, 18 | 0d |  | 0% | 77 | EXE |
| 92 | 1.3.12.2 | Underground water lines | 40d | 2019-12-09 | 2020-01-28 | 91FF+6d, 97SS+20d | 12d |  | 0% | 51 | EXE |
| 93 | 1.3.12.3 | Stormwater main lines | 65d | 2019-11-15 | 2020-02-06 | 91SS+8d | 25d |  | 0% | 83 | EXE |
| 94 | 1.3.12.4 | Underground power lines | 40d | 2019-12-07 | 2020-01-27 | 97SS+10d, 91FF+5d | 0d |  | 0% | 52 | EXE |
| 95 | 1.3.12.5 | underground phone lines | 30d | 2019-12-23 | 2020-01-29 | 41, 94FF+2d, 97SS+20d | 31d |  | 0% | 38 | EXE |
| 96 | 1.3.12.6 | civil work for electrical installation | 55d | 2019-11-26 | 2020-02-04 | 94FF+6d | 27d |  | 0% | 70 | EXE |
| 97 | 1.3.12.7 | Grading works | 70d | 2019-09-03 | 2019-11-30 | 17, 21SS+30d | 0d |  | 5% | 88 | EXE |
| 98 | 1.3.12.8 | Light poles and wall packs | 15d | 2020-01-30 | 2020-02-18 | 97, 99, 102SS+2d | 16d |  | 0% | 20 | EXE |
| 99 | 1.3.12.9 | crushed base | 65d | 2019-11-08 | 2020-01-29 | 94FF+2d | 0d |  | 0% | 83 | EXE |
| 100 | 1.3.12.10 | Curbs and gutter | 60d | 2019-12-02 | 2020-02-14 | 99FF+13d | 2d | 0d | 0% | 75 | EXE |
| 101 | 1.3.12.11 | sidewalks | 40d | 2020-01-02 | 2020-02-21 | 100SS+10d, 102FF+2d | 2d |  | 0% | 51 | EXE |
| 102 | 1.3.12.12 | asphalt pavement | 45d | 2019-12-24 | 2020-02-19 | 100FF+3d, 104SS | 2d | 0d | 0% | 57 | EXE |
| 103 | 1.3.12.13 | paint strip | 25d | 2020-01-27 | 2020-02-26 | 102FF+6d | 2d |  | 0% | 31 | EXE |
| 104 | 1.3.12.14 | concrete truck apron | 40d | 2019-12-23 | 2020-02-11 | 99FF+10d | 3d | 1d | 0% | 51 | EXE |
| 105 | 1.3.12.15 | Gravel | 30d | 2020-01-21 | 2020-02-27 | 100FF+10d | 8d |  | 0% | 38 | EXE |
| 106 | 1.3.12.16 | Irrigation system | 45d | 2019-12-27 | 2020-02-22 | 99FF+19d, 92FF+8d | 0d |  | 0% | 57 | EXE |
| 107 | 1.3.12.17 | landscape | 45d | 2020-01-03 | 2020-02-28 | 106SS+5d, 101FF+4d | 0d |  | 0% | 57 | EXE |

| ID | WBS | Task | Type | Duration | Start | Finish | Predecessors | Total slack | ACTUAL COMPLETED | Texto3 | Número1 |
| --- | --- | --- | --- | --- | --- | --- | --- | --- | --- | --- | --- |
| 108 | 1.4 | **Beneficial Occupancy** |  | 0d | 2020-02-18 | 2020-02-18 |  | 16d | 0% |  |  |
| 109 | 1.4.1 | Beneficial occupancy complete | milestone | 0d | 2020-02-18 | 2020-02-18 | 65, 64FS-5d, 69, 71, 46, 70 | 16d | 0% | PLA |  |
| 110 | 1.5 | **Substantial Completion** |  | 0d | 2020-02-28 | 2020-02-28 |  | 0d | 0% |  |  |
| 111 | 1.5.1 | Substantial Completion final | milestone | 0d | 2020-02-28 | 2020-02-28 | 101, 102, 47, 107, 103, 85, 81, 70, 89, 86 | 0d | 0% | PLA |  |
| 112 | 1.6 | **Final completion** |  | 7d | 2020-02-29 | 2020-03-09 |  | 0d | 0% |  | 10 |
| 113 | 1.6.1 | Punch list |  | 7d | 2020-02-29 | 2020-03-09 | 111 | 0d | 0% | PLA | 10 |
| 114 | 1.6.2 | Administrative closing |  | 6d | 2020-02-29 | 2020-03-07 | 113SS, 14 | 1d | 0% | PLA | 8 |
| 115 | 1.6.3 | Finnal completion | milestone | 0d | 2020-03-09 | 2020-03-09 | 114, 113 | 0d | 0% | PLA |  |

Notes:
- 111: In order to consider sustantial completion the following activities should be complete: / a.- Building water tight / b.- Dock equipment installed and operational / c.- WH lighting and emergency complete / d.- pavinf areas complete / e.- guar house complete / f.- fence and gates complete. / g.- Power available on site.
