# Programa de obra

Schedule from MS Project XML, 2020-02-28 to 2020-08-26, status date 2020-03-11, A marks actual dates.

## Calendars

- Estándar: Mon-Fri 09:00-13:00, 15:00-19:00; Sat-Sun off.

## Schedule

| ID | WBS | Task | Duration | Start | Finish | Predecessors | Complete | Remaining | Total slack | Free slack | Texto1 | Texto2 |
| --- | --- | --- | --- | --- | --- | --- | --- | --- | --- | --- | --- | --- |
| 1 | 1 | **SODIMAC San Mateo** | 129d | 2020-02-28 A | 2020-08-26 |  | 5% | 121.98d | 0d |  | Task Type | Simulation |
| 2 | 1.1 | Terreno | 1d | 2020-02-28 A | 2020-02-28 A |  | 100% |  |  |  | Construct |  |
| 3 | 1.2 | Preliminares | 1d | 2020-02-28 A | 2020-02-28 A |  | 100% |  |  |  | Construct |  |
| 4 | 1.3 | **Terracerías** | 19d | 2020-02-28 A | 2020-03-25 |  | 44% | 10.7d | 110d |  |  |  |
| 5 | 1.3.1 | Despalme | 4d | 2020-02-28 A | 2020-03-04 A |  | 100% |  |  |  | Construct | LOS_11 |
| 6 | 1.3.2 | Corte | 12d | 2020-03-02 A | 2020-03-17 | 5SS+1d | 80% | 2.4d | 116d | 0d | Construct | LOS_11 |
| 7 | 1.3.3 | Tratamiento de terreno natural | 6d | 2020-03-09 A | 2020-03-16 | 6SS+5d | 30% | 4.2d | 117d | 0d | Construct | LOS_11 |
| 8 | 1.3.4 | Subrasante | 8d | 2020-03-11 A | 2020-03-20 | 7SS+2d | 10% | 7.2d | 113d | 0d | Construct | LOS_11 |
| 9 | 1.3.5 | Base Hidráulica | 8d | 2020-03-16 A | 2020-03-25 | 8SS+3d | 5% | 7.6d | 0d |  | Construct | LOS_11 |
| 10 | 1.4 | **Inicio de obra** | 108d | 2020-03-30 | 2020-08-26 |  |  |  | 0d |  |  |  |
| 11 | 1.4.1 | **Cimentaciones** | 42d | 2020-03-30 | 2020-05-26 |  |  |  | 0d |  |  |  |
| 12 | 1.4.1.1 | **Eje 1-5, A-G** | 25d | 2020-03-30 | 2020-05-01 |  |  |  | 0d |  |  |  |
| 13 | 1.4.1.1.1 | **Excavación, armado y colado de zapatas aisladas** | 15d | 2020-03-30 | 2020-04-17 |  |  |  | 0d |  |  |  |
| 14 | 1.4.1.1.1.1 | Excavación | 6d | 2020-03-30 | 2020-04-06 | 9FS+2d |  |  | 0d |  | Construct | CIM_11 |
| 15 | 1.4.1.1.1.2 | Armado | 8d | 2020-04-01 | 2020-04-10 | 14SS+2d |  |  | 93d | 0d | Construct | CIM_11 |
| 16 | 1.4.1.1.1.3 | Colado | 8d | 2020-04-03 | 2020-04-14 | 15SS+2d |  |  | 93d | 0d | Construct | CIM_11 |
| 17 | 1.4.1.1.1.4 | Contratrabes | 8d | 2020-04-08 | 2020-04-17 | 16SS+3d |  |  | 93d |  | Construct | CIM_12 |
| 18 | 1.4.1.1.2 | **Excavación, armado y colado de zapatas corridas** | 22d | 2020-04-02 | 2020-05-01 |  |  |  | 0d |  |  |  |
| 19 | 1.4.1.1.2.1 | Excavación | 6d | 2020-04-02 | 2020-04-09 | 14SS+3d |  |  | 0d |  | Construct | CIM_13 |
| 20 | 1.4.1.1.2.2 | Armado | 8d | 2020-04-06 | 2020-04-15 | 19SS+2d |  |  | 0d |  | Construct | CIM_13 |
| 21 | 1.4.1.1.2.3 | Colado | 8d | 2020-04-08 | 2020-04-17 | 20SS+2d |  |  | 0d |  | Construct | CIM_13 |
| 22 | 1.4.1.1.2.4 | Contratrabes | 8d | 2020-04-13 | 2020-04-22 | 21SS+3d |  |  | 0d |  | Construct | CIM_14 |
| 23 | 1.4.1.1.2.5 | Colado de losa | 12d | 2020-04-16 | 2020-05-01 | 22SS+3d |  |  | 0d |  | Construct | CIM_54 |
| 24 | 1.4.1.2 | **Eje 6-9, A-G** | 24d | 2020-04-23 | 2020-05-26 |  |  |  | 0d |  |  |  |
| 25 | 1.4.1.2.1 | **Excavación, armado y colado de zapatas aisladas** | 15d | 2020-04-23 | 2020-05-13 |  |  |  | 0d |  |  |  |
| 26 | 1.4.1.2.1.1 | Excavación | 6d | 2020-04-23 | 2020-04-30 | 23SS+5d |  |  | 0d |  | Construct | CIM_21 |
| 27 | 1.4.1.2.1.2 | Armado | 8d | 2020-04-27 | 2020-05-06 | 26SS+2d |  |  | 75d | 0d | Construct | CIM_21 |
| 28 | 1.4.1.2.1.3 | Colado | 8d | 2020-04-29 | 2020-05-08 | 27SS+2d |  |  | 75d | 0d | Construct | CIM_21 |
| 29 | 1.4.1.2.1.4 | Contratrabes | 8d | 2020-05-04 | 2020-05-13 | 28SS+3d |  |  | 75d |  | Construct | CIM_22 |

| ID | WBS | Task | Duration | Start | Finish | Predecessors | Total slack | Free slack | Texto1 | Texto2 |
| --- | --- | --- | --- | --- | --- | --- | --- | --- | --- | --- |
| 30 | 1.4.1.2.2 | **Excavación, armado y colado de zapatas corridas** | 21d | 2020-04-28 | 2020-05-26 |  | 0d |  |  |  |
| 31 | 1.4.1.2.2.1 | Excavación | 6d | 2020-04-28 | 2020-05-05 | 26SS+3d | 0d |  | Construct | CIM_23 |
| 32 | 1.4.1.2.2.2 | Armado | 8d | 2020-04-30 | 2020-05-11 | 31SS+2d | 0d |  | Construct | CIM_23 |
| 33 | 1.4.1.2.2.3 | Colado | 8d | 2020-05-04 | 2020-05-13 | 32SS+2d | 0d |  | Construct | CIM_23 |
| 34 | 1.4.1.2.2.4 | Contratrabes | 8d | 2020-05-07 | 2020-05-18 | 33SS+3d | 0d |  | Construct | CIM_24 |
| 35 | 1.4.1.2.2.5 | Colado de losa | 12d | 2020-05-11 | 2020-05-26 | 34SS+2d | 66d |  | Construct | CIM_55 |
| 36 | 1.4.1.3 | **Cisterna** | 3d | 2020-04-30 | 2020-05-04 |  | 82d |  |  |  |
| 37 | 1.4.1.3.1 | Excavación | 1d | 2020-04-30 | 2020-04-30 | 26SS+5d | 82d | 0d | Construct | CIM_25 |
| 38 | 1.4.1.3.2 | Armado | 1d | 2020-05-01 | 2020-05-01 | 37 | 82d | 0d | Construct | CIM_25 |
| 39 | 1.4.1.3.3 | Colado | 1d | 2020-05-04 | 2020-05-04 | 38 | 82d |  | Construct | CIM_25 |
| 40 | 1.4.2 | **Estructura** | 28d | 2020-04-27 | 2020-06-03 |  | 18d |  |  |  |
| 41 | 1.4.2.1 | **Estructura principal ejes 1-5, A-G** | 9d | 2020-04-27 | 2020-05-07 |  | 74d |  |  |  |
| 42 | 1.4.2.1.1 | Columnas | 7d | 2020-04-27 | 2020-05-05 | 22SS+10d | 74d | 0d | Construct | COL_11 |
| 43 | 1.4.2.1.2 | Trabes | 7d | 2020-04-29 | 2020-05-07 | 42SS+2d | 74d | 0d | Construct | TRA_11 |
| 44 | 1.4.2.1.3 | Accesorios | 1d | 2020-05-06 | 2020-05-06 | 42 | 80d |  | Construct | COL_12 |
| 45 | 1.4.2.2 | **Estructura principal ejes 6-9, A-G** | 10d | 2020-05-21 | 2020-06-03 |  | 0d |  |  |  |
| 46 | 1.4.2.2.1 | Columnas | 7d | 2020-05-21 | 2020-05-29 | 34SS+10d | 0d |  | Construct | COL_21 |
| 47 | 1.4.2.2.2 | Trabes | 7d | 2020-05-25 | 2020-06-02 | 46SS+2d | 0d |  | Construct | TRA_21 |
| 48 | 1.4.2.2.3 | Accesorios | 1d | 2020-06-03 | 2020-06-03 | 47 | 60d |  | Construct | COL_22 |
| 49 | 1.4.3 | **Cubierta** | 29d | 2020-04-30 | 2020-06-09 |  | 18d |  |  |  |
| 50 | 1.4.3.1 | **Estructura de cubierta ejes 1-5, A-G** | 11d | 2020-04-30 | 2020-05-14 |  | 74d |  |  |  |
| 51 | 1.4.3.1.1 | Colocación de Purlins | 7d | 2020-04-30 | 2020-05-08 | 43SS+1d | 74d | 0d | Construct | TEC_28 |
| 52 | 1.4.3.1.2 | Colocación de Rafters | 7d | 2020-05-05 | 2020-05-13 | 51SS+3d | 74d | 0d | Construct | TEC_28 |
| 53 | 1.4.3.1.3 | Colocación de lámina KR-18 | 7d | 2020-05-06 | 2020-05-14 | 52SS+1d | 74d |  | Construct | TEC_60 |

| ID | WBS | Task | Duration | Start | Finish | Predecessors | Total slack | Free slack | Texto1 | Texto2 |
| --- | --- | --- | --- | --- | --- | --- | --- | --- | --- | --- |
| 54 | 1.4.3.2 | **Estructura de cubierta ejes 6-9, A-G** | 11d | 2020-05-26 | 2020-06-09 |  | 0d |  |  |  |
| 55 | 1.4.3.2.1 | Colación de Purlins | 7d | 2020-05-26 | 2020-06-03 | 47SS+1d | 0d |  | Construct | TEC_25 |
| 56 | 1.4.3.2.2 | Colocación de Rafters | 7d | 2020-05-29 | 2020-06-08 | 55SS+3d | 0d |  | Construct | TEC_25 |
| 57 | 1.4.3.2.3 | Colocación de lámina KR-18 | 7d | 2020-06-01 | 2020-06-09 | 56SS+1d | 0d |  | Construct | TEC_22 |
| 58 | 1.4.4 | **Fachadas** | 21d | 2020-06-11 | 2020-07-09 |  | 0d |  |  |  |
| 59 | 1.4.4.1 | Estructura para muros | 6d | 2020-06-11 | 2020-06-18 | 57FS+1d | 0d |  | Construct | MUR_12 |
| 60 | 1.4.4.2 | Muros de concreto prefabricado | 5d | 2020-06-16 | 2020-06-22 | 59SS+3d | 0d |  | Construct | MUR_12 |
| 61 | 1.4.4.3 | Lámina cal. 20 | 3d | 2020-06-23 | 2020-06-25 | 60 | 0d |  | Construct | MUR_13 |
| 62 | 1.4.4.4 | Canalones | 2d | 2020-06-26 | 2020-06-29 | 61 | 38d | 0d | Construct | MUR_14 |
| 63 | 1.4.4.5 | Bajantes | 2d | 2020-06-30 | 2020-07-01 | 62 | 38d | 0d | Construct | MUR_15 |
| 64 | 1.4.4.6 | Molduras | 2d | 2020-07-02 | 2020-07-03 | 63 | 38d |  | Construct | MUR_16 |
| 65 | 1.4.4.7 | Colocación de muro de tablaroca | 3d | 2020-06-26 | 2020-06-30 | 61 | 32d | 0d | Construct | MUR_22 |
| 66 | 1.4.4.8 | Colocación de marcos para ventanales | 3d | 2020-07-01 | 2020-07-03 | 65 | 32d | 0d | Construct | MURR_ |
| 67 | 1.4.4.9 | Colocación de vidrio en ventanales | 3d | 2020-07-06 | 2020-07-08 | 66 | 32d | 0d | Construct | MUR_24 |
| 68 | 1.4.4.10 | Colocación de letrero | 1d | 2020-07-09 | 2020-07-09 | 67 | 32d | 0d | Construct | MUR_25 |
| 69 | 1.4.5 | **Muros interiores** | 6d | 2020-06-26 | 2020-07-03 |  | 0d |  |  |  |
| 70 | 1.4.5.1 | Estructura en muros | 2d | 2020-06-26 | 2020-06-29 | 61 | 0d |  | Construct | MUR_31 |
| 71 | 1.4.5.2 | Lámina en muros | 2d | 2020-06-30 | 2020-07-01 | 70 | 0d |  | Construct | MUR_31 |
| 72 | 1.4.5.3 | Tablaroca en muros | 2d | 2020-07-02 | 2020-07-03 | 71 | 0d |  | Construct | MUR_31 |
| 73 | 1.4.6 | **Trabajos en cubierta** | 7d | 2020-06-10 | 2020-06-18 |  | 49d |  |  |  |
| 74 | 1.4.6.1 | Ventiladores atmosféricos | 2d | 2020-06-10 | 2020-06-11 | 57 | 49d | 0d | Construct | TEC_31 |
| 75 | 1.4.6.2 | Domos | 2d | 2020-06-12 | 2020-06-15 | 74 | 49d | 0d | Construct | TEC_32 |
| 76 | 1.4.6.3 | Pasos de gato | 1d | 2020-06-16 | 2020-06-16 | 75 | 49d | 0d | Construct | TEC_33 |
| 77 | 1.4.6.4 | Linea de vida | 1d | 2020-06-17 | 2020-06-17 | 76 | 49d | 0d | Construct | TEC_34 |
| 78 | 1.4.6.5 | Escalera marina | 1d | 2020-06-18 | 2020-06-18 | 77 | 49d |  | Construct | TEC_35 |

| ID | WBS | Task | Duration | Start | Finish | Predecessors | Total slack | Free slack | Texto1 | Texto2 |
| --- | --- | --- | --- | --- | --- | --- | --- | --- | --- | --- |
| 79 | 1.4.7 | **Interiores** | 6d | 2020-07-06 | 2020-07-13 |  | 0d |  |  |  |
| 80 | 1.4.7.1 | Puertas en exteriores | 1d | 2020-07-10 | 2020-07-10 | 68 | 32d | 0d | Construct | PUE_1 |
| 81 | 1.4.7.2 | Puertas metálicas de emergencia | 1d | 2020-07-13 | 2020-07-13 | 80 | 32d |  | Construct | PUE_2 |
| 82 | 1.4.7.3 | Puertas de madera en espacios interiores | 1d | 2020-07-06 | 2020-07-06 | 69 | 0d |  | Construct | PUE_3 |
| 83 | 1.4.8 | **Mobiliario** | 2d | 2020-07-07 | 2020-07-08 |  | 0d |  |  |  |
| 84 | 1.4.8.1 | Instalación de racks | 2d | 2020-07-07 | 2020-07-08 | 82 | 0d |  | Construct | MOB_11 |
| 85 | 1.4.9 | **Obras exteriores** | 35d | 2020-07-09 | 2020-08-26 |  | 0d |  |  |  |
| 86 | 1.4.9.1 | **Muros de contención** | 21d | 2020-07-09 | 2020-08-06 |  | 0d |  |  |  |
| 87 | 1.4.9.1.1 | Colado | 15d | 2020-07-09 | 2020-07-29 | 84 | 0d |  | Construct | MUR_41 |
| 88 | 1.4.9.1.2 | Pavimento asfáltico en estacionamientos | 6d | 2020-07-30 | 2020-08-06 | 87 | 0d |  | Construct | MUR_44 |
| 89 | 1.4.9.2 | Guarniciones | 2d | 2020-08-07 | 2020-08-10 | 88 | 0d |  | Construct | MUR_42 |
| 90 | 1.4.9.3 | Banquetas | 2d | 2020-08-11 | 2020-08-12 | 89 | 0d |  | Construct | MUR_43 |
| 91 | 1.4.9.4 | Piso de concreto para rampa y desperdicio | 8d | 2020-08-13 | 2020-08-24 | 90 | 0d |  | Construct |  |
| 92 | 1.4.9.5 | Limpieza fin de obra | 2d | 2020-08-25 | 2020-08-26 | 91 | 0d |  | Construct |  |
