# 2019-05-21 PROGRAMA TRUPER POR AREAS TRUPER-CORDINA

Schedule from MS Project XML, 2018-11-14 to 2019-11-19, A marks actual dates.
Toshiba

## Calendars

- Estándar: Mon-Sat 09:00-13:00, 15:00-19:00; Sun off. Exceptions (off unless hours are given): 2018-11-19 (aniv de la rev), 2018-12-01 (transicion de poder ejecutivo federal), 2018-12-22 to 2018-12-25 (navidad), 2018-12-29 to 2019-01-01 (año nuevo), 2019-02-04 (const), 2019-03-19 (benito), 2019-04-18 to 2019-04-20 (semana santa), 2019-05-01 (dia trabajo), 2019-09-16 (indepe), 2019-11-18 (aniv de la rev).

## Schedule

| ID | WBS | Task | Type | Duration | Start | Finish | Predecessors | Complete | Remaining | Total slack | Free slack | Constraint | Texto1 | Texto2 | Texto3 |
| --- | --- | --- | --- | --- | --- | --- | --- | --- | --- | --- | --- | --- | --- | --- | --- |
| 1 | 1 | **Truper** |  | 302d? | 2018-11-14 A | 2019-11-19 |  | 38% | 188.07d? | 0d |  |  | Task Type | Simulation | Tipo de tarea |
| 2 | 1.1 | **Preliminares** |  | 23d | 2018-11-14 A | 2018-12-13 A |  | 100% |  |  |  |  |  |  |  |
| 3 | 1.1.1 | Asignación | milestone | 0d | 2018-11-14 A | 2018-11-14 A |  | 100% |  |  |  |  | Construct |  | PLA |
| 4 | 1.1.2 | Elaboración y firma de contrato |  | 5d | 2018-11-16 A | 2018-11-22 A |  | 100% |  |  |  | start no earlier than 2018-11-16 | Construct |  | PLA |
| 5 | 1.1.3 | Elaboración de Propuesta Arquitectónica para aprobación de elevaciones y Layout |  | 4d | 2018-11-16 A | 2018-11-21 A |  | 100% |  |  |  | start no earlier than 2018-11-16 | Construct |  | PLA |
| 6 | 1.1.4 | Corrida Estructual de acuerdo a nueva propuesta arquitectonica |  | 4d | 2018-11-20 A | 2018-11-23 A | 5SS+2d | 100% |  |  |  |  | Construct |  | PLA |
| 7 | 1.1.5 | Elaboracion de Balance Economico de acuerdo a nueva propuesta Arquitectonica |  | 3d | 2018-11-24 A | 2018-11-27 A | 6 | 100% |  |  |  |  | Construct |  | PLA |
| 8 | 1.1.6 | Aprobación por TRUPER de Propuesta Arquitecónica, Layout y Propuesta Economica |  | 3d | 2018-11-28 A | 2018-11-30 A | 7 | 100% |  |  |  | start no earlier than 2018-11-16 |  |  | PLA |
| 9 | 1.1.7 | Congelar Layout por TRUPER | milestone | 0d | 2018-12-13 A | 2018-12-13 A | 8 | 100% |  |  |  | start no earlier than 2018-12-13 |  |  | PLA |
| 10 | 1.1.8 | Informacion de gruas por TRUPER | milestone | 0d | 2018-11-16 A | 2018-11-16 A |  | 100% |  |  |  | start no earlier than 2018-11-16 | Construct |  | PLA |
| 11 | 1.2 | **Diseño** |  | 71d | 2018-11-23 A | 2019-02-22 |  | 99% | 0.39d | 224d |  |  |  |  |  |
| 12 | 1.2.1 | Terracerias |  | 2w | 2018-11-23 A | 2018-12-07 A | 3, 4 | 100% |  |  |  |  | Construct |  | PLA |
| 13 | 1.2.2 | Cimentaciones |  | 3w | 2018-12-14 A | 2019-01-10 A | 12SS, 9FS+1d, 10 | 100% |  |  |  |  | Construct | 1CIM_01 | PLA |
| 14 | 1.2.3 | Estructura |  | 8w | 2018-12-14 A | 2019-02-15 A | 13SS | 100% |  |  |  |  | Construct | 1EST_01 | PLA |
| 15 | 1.2.4 | Arquitectonicos |  | 8w | 2018-12-21 A | 2019-02-22 | 14SS+1w | 99% | 0.08w | 224d | 0d |  | Construct | 1MUI_01 | PLA |
| 16 | 1.2.5 | Civiles |  | 8w | 2018-12-21 A | 2019-02-22 | 15SS | 99% | 0.08w | 224d |  |  | Construct | 1FAC_01 | PLA |
| 17 | 1.3 | **Compras** |  | 18d | 2019-01-11 A | 2019-01-31 A |  | 100% |  |  |  |  |  |  |  |
| 18 | 1.3.1 | Asignación estructura metálica |  | 3w | 2019-01-11 A | 2019-01-31 A | 14SS+3w | 100% |  |  |  |  | Construct | 1EST_01 | PLA |
| 19 | 1.4 | **Planos de taller** |  | 48d | 2019-02-01 A | 2019-03-30 |  | 99% | 0.48d | 194d |  |  |  |  |  |
| 20 | 1.4.1 | Estructura metálica |  | 8w | 2019-02-01 A | 2019-03-30 | 18 | 99% | 0.08w | 194d | 0d |  | Construct | 1EST_01 | PLA |
| 21 | 1.5 | **Fabricación estructura** |  | 48d | 2019-02-20 A | 2019-04-17 |  | 95% | 2.4d | 179d |  |  |  |  |  |
| 22 | 1.5.1 | Fabricación estructura metálica |  | 8w | 2019-02-20 A | 2019-04-17 | 20SS+15d | 95% | 0.4w | 179d | 0d |  | Construct | 1EST_01 | PLA |
| 23 | 1.6 | **Suministros** |  | 60d | 2019-03-18 A | 2019-05-31 |  | 90% | 6d | 145d |  |  |  |  |  |
| 24 | 1.6.1 | Estructura metálica |  | 10w | 2019-03-18 A | 2019-05-31 | 22SS+22d | 90% | 1w | 145d |  |  | Construct | 1EST_01 | PLA |

| ID | WBS | Task | Type | Duration | Start | Finish | Predecessors | Complete | Remaining | Actual start | Total slack | Free slack | Constraint | Texto1 | Texto3 | Texto2 |
| --- | --- | --- | --- | --- | --- | --- | --- | --- | --- | --- | --- | --- | --- | --- | --- | --- |
| 25 | 1.7 | **Permisos** |  | 0d | 2018-11-14 A | 2018-11-14 A |  | 100% |  |  |  |  |  |  |  |  |
| 26 | 1.7.1 | Permisos por parte del cliente | milestone | 0d | 2018-11-14 A | 2018-11-14 A |  | 100% |  |  |  |  |  | Construct | PLA |  |
| 27 | 1.8 | Movilización |  | 1w | 2018-12-08 A | 2018-12-14 A | 12, 4 | 100% |  |  |  |  |  |  | PLA |  |
| 28 | 1.9 | **Edificio** |  | 242d | 2018-12-15 A | 2019-10-08 |  | 40% | 145.6d |  | 35d |  |  |  |  |  |
| 29 | 1.9.1 | **Area Comformado de Palas (Del eje 1-20 de B-D) 13,148.00 m2** |  | 183d | 2018-12-17 A | 2019-07-31 |  | 65% | 64.37d |  | 81d | 0d |  |  |  |  |
| 30 | 1.9.1.1 | **Terracerias** |  | 122d | 2018-12-17 A | 2019-05-21 A |  | 100% |  |  |  |  |  |  |  |  |
| 31 | 1.9.1.1.1 | **Corte** |  | 27d | 2018-12-17 A | 2019-01-23 A |  | 100% |  |  |  |  |  |  |  |  |
| 32 | 1.9.1.1.1.1 | Despalme |  | 3d | 2018-12-17 A | 2018-12-19 A | 26, 27FS+1d | 100% |  |  |  |  |  | Construct |  |  |
| 33 | 1.9.1.1.1.2 | Tipo II |  | 3w | 2018-12-20 A | 2019-01-16 A | 32 | 100% |  |  |  |  |  | Construct |  |  |
| 34 | 1.9.1.1.1.3 | Tipo III |  | 3w | 2019-01-03 A | 2019-01-23 A | 33SS+1w | 100% |  |  |  |  |  | Construct |  |  |
| 35 | 1.9.1.1.2 | Escarificado y Nivel de Desplante |  | 4w | 2019-01-17 A | 2019-02-14 A | 34FS-6d | 100% |  |  |  |  |  | Construct | EXE |  |
| 36 | 1.9.1.1.3 | Subrasante |  | 4w | 2019-02-11 A | 2019-03-09 A | 35FS-4d | 100% |  |  |  |  |  | Construct | EXE |  |
| 37 | 1.9.1.1.4 | Autorizacion de Base por parte de Truper |  | 1d | 2019-04-15 A | 2019-04-15 A |  | 100% |  |  |  |  | start no earlier than 2019-04-15 | Construct | PLA |  |
| 38 | 1.9.1.1.5 | Colocacions de Oc para compra de Base |  | 1w | 2019-04-16 A | 2019-04-25 A | 37 | 100% |  |  |  |  |  | Construct | PLA |  |
| 39 | 1.9.1.1.6 | Base |  | 3.5w | 2019-04-26 A | 2019-05-21 A | 35SS+2w, 38 | 100% |  |  |  |  |  | Construct | EXE |  |
| 40 | 1.9.1.2 | **Cimentaciones** |  | 86d | 2019-02-15 A | 2019-05-31 A |  | 100% |  |  |  |  |  | cimentación terminada faltara 6 zapatas aisladas |  |  |
| 41 | 1.9.1.2.1 | Zapatas aisladas(60 pzas) |  | 71d | 2019-02-15 A | 2019-05-31 A |  | 100% |  |  |  |  | start no earlier than 2019-02-15 | Construct | EXE | 1CIM_01 |
| 42 | 1.9.1.2.2 | Zapatas corridas |  | 2w | 2019-03-01 A | 2019-03-14 A | 41SS+2w | 100% |  |  |  |  |  | Construct | EXE | 1CIM_02 |
| 43 | 1.9.1.2.3 | Muros de contención |  | 2w | 2019-03-15 A | 2019-03-29 A | 42SS+2w | 100% |  |  |  |  |  | Construct | EXE | 1CIM_03 |
| 44 | 1.9.1.3 | **Tierras Físicas** |  | 15d | 2019-04-22 A | 2019-05-09 |  | 99% | 0.15d |  | 152d |  |  | Concluida faltan detalles |  |  |
| 45 | 1.9.1.3.1 | Excavación |  | 1.5w | 2019-04-22 A | 2019-05-02 |  | 99% | 0.01w |  | 8.91d | 0d | start no earlier than 2019-04-22 | Construct | EXE |  |
| 46 | 1.9.1.3.2 | Tendido de Cable |  | 1.5w | 2019-04-25 A | 2019-05-06 | 45FS-1w | 99% | 0.01w |  | 8.91d | 0d |  | Construct | EXE |  |
| 47 | 1.9.1.3.3 | Colado de cepa |  | 1.5w | 2019-04-29 A | 2019-05-09 | 46FS-1w | 99% | 0.01w |  | 152d |  |  | Construct | EXE |  |
| 48 | 1.9.1.4 | **Estructura** |  | 48d | 2019-03-20 | 2019-06-08 |  | 99% | 0.17d | 2019-04-09 |  |  |  |  |  |  |
| 49 | 1.9.1.4.1 | Estructura principal |  | 5w | 2019-04-09 A | 2019-05-17 A | 41SS+3w, 24SS+3w | 100% |  |  |  |  |  | Construct | EXE | 1EST_01 |
| 50 | 1.9.1.4.2 | Estructura de cubierta |  | 4.5w | 2019-04-26 A | 2019-05-28 A | 49SS+2w | 100% |  |  |  |  |  | Construct | EXE | 1EST_02 |
| 51 | 1.9.1.4.3 | Accesorios |  | 4.5w | 2019-05-04 A | 2019-06-04 A | 50SS+1w | 100% |  |  |  |  |  | Construct | EXE | 1EST_03 |
| 52 | 1.9.1.4.4 | Trabe carril |  | 5w | 2019-05-04 A | 2019-06-07 | 49SS+3w | 99% | 0.05w |  | 127d |  |  | Construct | EXE | 1EST_04 |

| ID | WBS | Task | Duration | Start | Finish | Predecessors | Complete | Remaining | Total slack | Free slack | Constraint | Texto1 | Texto2 | Texto3 |
| --- | --- | --- | --- | --- | --- | --- | --- | --- | --- | --- | --- | --- | --- | --- |
| 53 | 1.9.1.5 | **Cubierta** | 18d | 2019-05-13 A | 2019-06-01 |  | 99% | 0.18d | 16.2d |  |  |  |  |  |
| 54 | 1.9.1.5.1 | KR-18 | 3w | 2019-05-13 A | 2019-06-01 | 50SS+2w | 99% | 0.03w | 16.2d | 0d | start no earlier than 2019-05-13 | Construct | 1CUB_01 | EXE |
| 55 | 1.9.1.6 | **Fachadas** | 84d | 2019-03-15 A | 2019-06-26 |  | 65% | 29.03d | 111d |  |  |  |  |  |
| 56 | 1.9.1.6.1 | Muros de block | 9w | 2019-03-15 A | 2019-05-22 | 42SS+2w | 98% | 0.18w | 111d | 0d |  | Construct | 1FAC_01 | EXE |
| 57 | 1.9.1.6.2 | Estructura para muros | 3w | 2019-05-09 A | 2019-05-29 | 56FF+1w | 98% | 0.06w | 111d | 0d |  | Construct | 1FAC_02 | EXE |
| 58 | 1.9.1.6.3 | Lámina Cal. 20 | 4w | 2019-05-09 A | 2019-06-05 | 57FF+1w | 70% | 1.2w | 111d | 0d |  | Construct | 1FAC_03 | EXE |
| 59 | 1.9.1.6.4 | Canalones | 3w | 2019-05-23 A | 2019-06-12 | 58FF+1w | 40% | 1.8w | 111d | 0d |  | Construct | 1FAC_04 | EXE |
| 60 | 1.9.1.6.5 | Bajantes | 3w | 2019-05-30 | 2019-06-19 | 59FF+1w |  |  | 111d | 0d |  | Construct | 1FAC_05 | EXE |
| 61 | 1.9.1.6.6 | Molduras | 3w | 2019-06-06 A | 2019-06-26 | 60FF+1w | 20% | 2.4w | 111d |  |  | Construct | 1FAC_06 | EXE |
| 62 | 1.9.1.7 | **Firmes** | 55d | 2019-05-13 A | 2019-07-15 |  | 15% | 46.78d | 95d |  |  |  |  |  |
| 63 | 1.9.1.7.1 | Definición Truper | 1d | 2019-05-13 A | 2019-05-13 A |  | 100% |  |  |  | start no earlier than 2019-05-13 | Construct | 1FIC_01 | PLA |
| 64 | 1.9.1.7.2 | Trincheras para instalaciones | 9w | 2019-05-14 A | 2019-07-15 | 63 | 20% | 7.2w | 95d |  |  | Construct |  | EXE |
| 65 | 1.9.1.7.3 | Colado de firmes | 4w | 2019-05-22 | 2019-06-18 | 39 |  |  | 81d | 0d |  | Construct | 1FIC_01 | EXE |
| 66 | 1.9.1.8 | **Muros interiores** | 36d | 2019-06-19 | 2019-07-30 |  |  |  | 82d |  |  |  |  |  |
| 67 | 1.9.1.8.1 | Estructura muros | 3w | 2019-06-19 | 2019-07-09 | 65 |  |  | 82d | 0d |  | Construct | 1MUI_01 | EXE |
| 68 | 1.9.1.8.2 | Lámina en muros | 3w | 2019-07-10 | 2019-07-30 | 67 |  |  | 82d |  |  | Construct | 1MUI_02 | EXE |
| 69 | 1.9.1.9 | **Trabajos en cubierta** | 18d | 2019-06-10 A | 2019-06-29 |  | 8% | 16.65d | 108d |  |  |  |  |  |
| 70 | 1.9.1.9.1 | Ventiladores atmosféricos | 3w | 2019-06-10 A | 2019-06-29 | 54SS+4w | 15% | 2.55w | 108d |  |  | Construct | 1TRC_01 | EXE |
| 71 | 1.9.1.9.2 | Domos | 3w | 2019-06-10 A | 2019-06-29 | 54SS+4w | 15% | 2.55w | 108d |  |  | Construct | 1TRC_02 | EXE |
| 72 | 1.9.1.9.3 | Pasos de gato | 3w | 2019-06-10 | 2019-06-29 | 54SS+4w |  |  | 108d |  |  | Construct | 1TRC_03 | EXE |
| 73 | 1.9.1.9.4 | Linea de vida | 3w | 2019-06-10 | 2019-06-29 | 54SS+4w |  |  | 108d |  |  | Construct |  | PLA |
| 74 | 1.9.1.10 | Acabados | 4w | 2019-06-22 | 2019-07-19 | 65SS+27d |  |  | 81d | 0d |  | Construct |  | EXE |
| 75 | 1.9.1.11 | Puertas | 16d | 2019-07-13 | 2019-07-31 | 74FS-1w |  |  | 81d |  |  | Construct | 1PUE_01 | EXE |
| 76 | 1.9.2 | **Area De Comformado Lineas Varias (Del eje 20-31 de B-D) 7,500.00 m2** | 242d | 2018-12-15 A | 2019-10-08 |  | 29% | 171.03d | 23d |  |  |  |  |  |
| 77 | 1.9.2.1 | **Corte y Terraplen** | 135d | 2018-12-15 A | 2019-06-04 |  | 99% | 1.8d | 11.4d |  |  |  |  |  |
| 78 | 1.9.2.1.1 | Despalme | 3d | 2018-12-15 A | 2018-12-18 A | 26, 27 | 100% |  |  |  |  | Construct |  | EXE |
| 79 | 1.9.2.1.2 | Corte | 2w | 2019-01-24 A | 2019-02-07 A | 78, 34 | 100% |  |  |  |  | Construct |  | EXE |
| 80 | 1.9.2.1.3 | Escarificado y Nivel de Desplante | 1w | 2019-02-08 A | 2019-02-14 A | 79 | 100% |  |  |  |  | Construct |  | EXE |
| 81 | 1.9.2.1.4 | Subrasante | 2w | 2019-02-15 A | 2019-02-28 A | 80 | 100% |  |  |  |  | Construct |  | EXE |
| 82 | 1.9.2.1.5 | Base | 2w | 2019-05-22 A | 2019-06-04 | 81, 39 | 95% | 0.1w | 11.4d | 0d |  | Construct |  | EXE |

| ID | WBS | Task | Duration | Start | Finish | Predecessors | Complete | Remaining | Actual start | Total slack | Free slack | Constraint | Texto1 | Texto2 | Texto3 |
| --- | --- | --- | --- | --- | --- | --- | --- | --- | --- | --- | --- | --- | --- | --- | --- |
| 83 | 1.9.2.2 | **Cimentaciones** | 52d | 2019-02-15 | 2019-05-31 |  | 96% | 3.52d | 2019-03-28 |  |  |  |  |  |  |
| 84 | 1.9.2.2.1 | Zapatas aisladas (33 pzas) | 8.67w | 2019-03-28 A | 2019-05-31 A | 78SS+8w | 100% |  |  |  |  | start no earlier than 2019-03-28 | Construct | 2CIM_01 | EXE |
| 85 | 1.9.2.2.2 | Zapatas corridas | 3w | 2019-04-29 A | 2019-05-20 | 84SS+4w | 95% | 0.15w |  | 143d | 0d |  | Construct | 2CIM_02 | EXE |
| 86 | 1.9.2.2.3 | Muros de contención | 3w | 2019-05-07 A | 2019-05-27 | 85SS+1w | 85% | 0.45w |  | 137d |  |  | Construct | 2CIM_03 | EXE |
| 87 | 1.9.2.3 | **Tierras Físicas** | 15d | 2019-05-03 A | 2019-05-20 |  | 99% | 0.15d |  | 143d |  |  |  |  |  |
| 88 | 1.9.2.3.1 | Excavación | 1.5w | 2019-05-03 A | 2019-05-13 | 45 | 99% | 0.01w |  | 8.91d | 0d | start no earlier than 2019-04-22 | Construct |  | EXE |
| 89 | 1.9.2.3.2 | Tendido de Cable | 1.5w | 2019-05-07 A | 2019-05-16 | 88FS-1w | 99% | 0.01w |  | 8.91d | 0d |  | Construct |  | EXE |
| 90 | 1.9.2.3.3 | Colado de cepa | 1.5w | 2019-05-10 A | 2019-05-20 | 89FS-1w | 99% | 0.01w |  | 143d |  |  | Construct |  | EXE |
| 91 | 1.9.2.4 | **Estructura** | 35d | 2019-05-21 A | 2019-06-29 |  | 56% | 15.31d |  |  |  |  |  |  |  |
| 92 | 1.9.2.4.1 | Estructura principal | 5w | 2019-05-21 A | 2019-06-24 |  | 90% | 0.5w |  | 113d | 0d |  | Construct | 2EST_01 | EXE |
| 93 | 1.9.2.4.2 | Estructura de cubierta | 5w | 2019-05-25 A | 2019-06-28 | 92SS+4d | 75% | 1.25w |  | 109d | 0d |  | Construct | 2EST_02 | EXE |
| 94 | 1.9.2.4.3 | Accesorios | 5w | 2019-05-25 A | 2019-06-28 | 93SS | 60% | 2w |  | 109d | 0d |  | Construct | 2EST_03 | EXE |
| 95 | 1.9.2.4.4 | Trabe carril | 5w | 2019-05-27 | 2019-06-29 | 94SS+1d |  |  |  | 108d |  |  | Construct | 2EST_04 | EXE |
| 96 | 1.9.2.5 | **Cubierta** | 60d | 2019-06-03 A | 2019-08-10 |  | 27% | 43.8d |  | 72d |  |  |  |  |  |
| 97 | 1.9.2.5.1 | KR-18 | 10w | 2019-06-03 A | 2019-08-10 | 93SS+1w, 54 | 27% | 7.3w |  | 72d | 7d |  | Construct | 2CUB_01 | EXE |
| 98 | 1.9.2.6 | **Fachadas** | 102d | 2019-05-14 A | 2019-09-09 |  | 33% | 68.44d |  | 47d |  |  |  |  |  |
| 99 | 1.9.2.6.1 | Muros de block | 12w | 2019-05-14 A | 2019-08-05 | 85SS+2w | 55% | 5.4w |  | 47d | 0d |  | Construct | 2FAC_01 | EXE |
| 100 | 1.9.2.6.2 | Estructura para muros | 4w | 2019-07-16 A | 2019-08-12 | 99FF+1w | 90% | 0.4w |  | 47d | 0d |  | Construct | 2FAC_02 | EXE |
| 101 | 1.9.2.6.3 | Lámina Cal .20 | 4w | 2019-07-23 | 2019-08-19 | 100FF+1w |  |  |  | 47d | 0d |  | Construct | 2FAC_03 | EXE |
| 102 | 1.9.2.6.4 | Canalones | 4w | 2019-07-30 | 2019-08-26 | 101FF+1w |  |  |  | 47d | 0d |  | Construct | 2FAC_04 | EXE |
| 103 | 1.9.2.6.5 | Bajantes | 4w | 2019-08-06 | 2019-09-02 | 102FF+1w |  |  |  | 47d | 0d |  | Construct | 2FAC_05 | EXE |
| 104 | 1.9.2.6.6 | Molduras | 3w | 2019-08-20 | 2019-09-09 | 103FF+1w |  |  |  | 47d |  |  | Construct | 2FAC_06 | EXE |
| 105 | 1.9.2.7 | **Firmes** | 79d | 2019-05-20 A | 2019-08-19 |  | 5% | 75.3d |  | 23d |  |  |  |  |  |
| 106 | 1.9.2.7.1 | Definicion Truper | 1d | 2019-05-20 A | 2019-05-20 A |  | 100% |  |  |  |  | start no earlier than 2019-05-20 | Construct | 2FIC_01 | PLA |
| 107 | 1.9.2.7.2 | Trincheras para instalaciones | 9w | 2019-05-21 A | 2019-07-22 | 106 | 5% | 8.55w |  | 23d | 0d |  | Construct | 2FIC_01 | PLA |
| 108 | 1.9.2.7.3 | Colado de firmes | 4w | 2019-07-23 | 2019-08-19 | 97SS+3w, 107 |  |  |  | 23d | 0d |  | Construct | 2FIC_01 | EXE |

| ID | WBS | Task | Duration | Start | Finish | Predecessors | Complete | Remaining | Actual start | Total slack | Free slack | Constraint | Texto1 | Texto2 | Texto3 |
| --- | --- | --- | --- | --- | --- | --- | --- | --- | --- | --- | --- | --- | --- | --- | --- |
| 109 | 1.9.2.8 | **Muros interiores** | 60d | 2019-07-30 | 2019-10-08 |  |  |  |  | 23d |  |  |  |  |  |
| 110 | 1.9.2.8.1 | Estructura muros | 8w | 2019-07-30 | 2019-09-24 | 108SS+1w |  |  |  | 23d | 0d |  | Construct | 2MUI_01 | EXE |
| 111 | 1.9.2.8.2 | Lámina en muros | 8w | 2019-08-13 | 2019-10-08 | 110SS+2w |  |  |  | 23d |  |  | Construct | 2MUI_02 | EXE |
| 112 | 1.9.2.9 | **Trabajos en cubierta** | 48d | 2019-07-09 | 2019-09-02 |  |  |  |  |  |  |  |  |  |  |
| 113 | 1.9.2.9.1 | Ventiladores atmosféricos | 48d | 2019-07-09 | 2019-09-02 | 97SS+4w |  |  |  | 53d |  |  | Construct | 2TRC_01 | EXE |
| 114 | 1.9.2.9.2 | Domos | 48d | 2019-07-09 | 2019-09-02 |  |  |  |  | 53d |  |  | Construct | 2TRC_02 | EXE |
| 115 | 1.9.2.9.3 | Pasos de gato | 48d | 2019-07-09 | 2019-09-02 |  |  |  |  | 53d |  |  | Construct | 2TRC_03 | EXE |
| 116 | 1.9.2.9.4 | Linea de vida | 48d | 2019-07-09 | 2019-09-02 |  |  |  |  | 53d |  |  | Construct | 2TRC_04 | PLA |
| 117 | 1.9.2.9.5 | Escalera marina | 48d | 2019-07-09 | 2019-09-02 |  |  |  |  | 53d |  |  | Construct | 2TRC_05 | EXE |
| 118 | 1.9.2.10 | Acabados | 4w | 2019-08-23 | 2019-09-20 | 108SS+27d |  |  |  | 32d | 0d |  | Construct |  | EXE |
| 119 | 1.9.2.11 | Puertas | 2w | 2019-09-13 | 2019-09-27 | 118FF+1w |  |  |  | 32d |  |  | Construct | 2PUE_01 | EXE |
| 120 | 1.9.2.12 | Trinchera pluvial | 10w | 2019-07-02 | 2019-09-09 | 103FF+1w |  |  |  | 47d |  |  | Construct | 2TPV_01 | EXE |
| 121 | 1.9.3 | **Area de Almacen de Materia Prima y Componentes (Del eje 1-31 de a-B) 10,500 m2** | 239d | 2018-12-19 A | 2019-10-08 |  | 28% | 171.81d |  | 35d | 23d |  |  |  |  |
| 122 | 1.9.3.1 | **Corte y Terraplen** | 144d | 2018-12-19 A | 2019-06-18 |  | 99% | 1.52d |  | 100d |  |  |  |  |  |
| 123 | 1.9.3.1.1 | Despalme | 3d | 2018-12-19 A | 2018-12-21 A | 78 | 100% |  |  |  |  |  | Construct |  | EXE |
| 124 | 1.9.3.1.2 | Corte | 1w | 2018-12-26 A | 2019-01-04 A | 123 | 100% |  |  |  |  |  | Construct |  | EXE |
| 125 | 1.9.3.1.3 | Terraplen | 4w | 2019-01-26 A | 2019-02-23 A | 124FS+3w | 100% |  |  |  |  |  | Construct |  | EXE |
| 126 | 1.9.3.1.4 | Subrasante | 2w | 2019-02-25 A | 2019-03-09 A | 26, 27, 125 | 100% |  |  |  |  |  | Construct |  | EXE |
| 127 | 1.9.3.1.5 | Base | 2w | 2019-06-05 A | 2019-06-18 | 126SS+1w, 82 | 95% | 0.1w |  | 100d | 45d |  | Construct |  | EXE |
| 128 | 1.9.3.2 | **Cimentaciones** | 79.5d | 2019-02-15 | 2019-05-31 |  | 93% | 5.73d | 2019-02-22 |  |  |  |  |  |  |
| 129 | 1.9.3.2.1 | Zapatas aisladas(31 pzas.) | 3w | 2019-02-22 A | 2019-05-31 A |  | 100% |  |  |  |  | finish no earlier than 2019-05-31 | Construct | 3CIM_01 | EXE |
| 130 | 1.9.3.2.2 | Zapatas corridas | 3w | 2019-04-24 A | 2019-05-16 | 129SS+8w | 95% | 0.15w |  | 146.5d | 0d |  | Construct | 3CIM_02 | EXE |
| 131 | 1.9.3.2.3 | Muros de contención | 3w | 2019-05-09 A | 2019-05-30 | 130SS+2w | 85% | 0.45w |  | 134.5d |  |  | Construct | 3CIM_03 | EXE |
| 132 | 1.9.3.3 | **Tierras Físicas** | 18d | 2019-05-14 A | 2019-06-03 |  | 99% | 0.18d |  | 131d |  |  |  |  |  |
| 133 | 1.9.3.3.1 | Excavación | 2w | 2019-05-14 A | 2019-05-27 | 88 | 99% | 0.02w |  | 11.88d | 0d | start no earlier than 2019-04-22 | Construct |  | EXE |
| 134 | 1.9.3.3.2 | Tendido de Cable | 2w | 2019-05-17 A | 2019-05-30 | 133FS-1.5w | 99% | 0.02w |  | 11.88d | 0d |  | Construct |  | EXE |
| 135 | 1.9.3.3.3 | Colado de cepa | 2w | 2019-05-21 A | 2019-06-03 | 134FS-1.5w | 99% | 0.02w |  | 131d |  |  | Construct |  | EXE |

| ID | WBS | Task | Duration | Start | Finish | Predecessors | Complete | Remaining | Total slack | Free slack | Constraint | Texto1 | Texto2 | Texto3 |
| --- | --- | --- | --- | --- | --- | --- | --- | --- | --- | --- | --- | --- | --- | --- |
| 136 | 1.9.3.4 | **Estructura** | 22d | 2019-06-27 A | 2019-07-22 |  | 33% | 14.67d |  |  |  |  |  |  |
| 137 | 1.9.3.4.1 | Estructura principal | 22d | 2019-06-27 A | 2019-07-22 |  | 55% | 9.9d | 89d | 0d |  | Construct | 3EST_01 | EXE |
| 138 | 1.9.3.4.2 | Estructura de cubierta | 20d | 2019-06-29 A | 2019-07-22 | 137SS+2d | 26% | 14.8d | 89d | 0d |  | Construct | 3EST_02 | EXE |
| 139 | 1.9.3.4.3 | Accesorios | 18d | 2019-07-02 A | 2019-07-22 | 138SS+2d | 15% | 15.3d | 89d |  |  | Construct |  | EXE |
| 140 | 1.9.3.5 | **Cubierta** | 18d | 2019-07-20 | 2019-08-09 |  |  |  | 35d |  |  |  |  |  |
| 141 | 1.9.3.5.1 | KR-18 | 3w | 2019-07-20 | 2019-08-09 | 138SS+3w |  |  | 35d | 0d |  |  | 3CUB_01 | EXE |
| 142 | 1.9.3.6 | **Fachadas** | 60d | 2019-07-04 A | 2019-09-11 |  | 20% | 48.3d | 45d |  |  |  |  |  |
| 143 | 1.9.3.6.1 | Muros de block | 5w | 2019-07-04 A | 2019-08-07 | 137SS+1w | 75% | 1.25w | 45d | 0d |  | Construct | 3FAC_01 | EXE |
| 144 | 1.9.3.6.2 | Estructura para muros | 3w | 2019-07-25 A | 2019-08-14 | 143FF+1w | 5% | 2.85w | 45d | 0d |  | Construct | 3FAC_02 | EXE |
| 145 | 1.9.3.6.3 | Lámina TR-101 | 3w | 2019-08-01 | 2019-08-21 | 144FF+1w |  |  | 45d | 0d |  | Construct | 3FAC_03 | EXE |
| 146 | 1.9.3.6.4 | Canalones | 3w | 2019-08-08 | 2019-08-28 | 145FF+1w |  |  | 45d | 0d |  | Construct | 3FAC_04 | EXE |
| 147 | 1.9.3.6.5 | Bajantes | 3w | 2019-08-15 | 2019-09-04 | 146FF+1w |  |  | 45d | 0d |  | Construct | 3FAC_05 | EXE |
| 148 | 1.9.3.6.6 | Molduras | 3w | 2019-08-22 | 2019-09-11 | 147FF+1w |  |  | 45d |  |  | Construct | 3FAC_06 | EXE |
| 149 | 1.9.3.7 | **Firmes** | 18d | 2019-08-10 | 2019-08-30 |  |  |  | 55d |  |  |  |  |  |
| 150 | 1.9.3.7.1 | Colado de firmes | 3w | 2019-08-10 | 2019-08-30 | 141SS+3w, 127 |  |  | 55d | 0d |  | Construct | 3FIC_01 | EXE |
| 151 | 1.9.3.8 | **Ventilación** | 56d | 2019-08-03 | 2019-10-08 |  |  |  |  |  |  |  |  |  |
| 152 | 1.9.3.8.1 | Ventiladores atmosféricos | 56d | 2019-08-03 | 2019-10-08 | 141FS-1w |  |  | 35d |  | start no earlier than 2019-07-11 | Construct | 3VEN_01 | EXE |
| 153 | 1.9.3.8.2 | Domos | 56d | 2019-08-03 | 2019-10-08 |  |  |  | 23d |  |  | Construct | 3VEN_02 | EXE |
| 154 | 1.9.3.8.3 | Paso de gato | 56d | 2019-08-03 | 2019-10-08 |  |  |  | 23d |  |  | Construct | 3VEN_03 | EXE |
| 155 | 1.9.3.8.4 | Linea de vida | 56d | 2019-08-03 | 2019-10-08 |  |  |  | 23d |  |  | Construct | 3VEN_04 | EXE |
| 156 | 1.9.3.8.5 | Escalera Marina | 56d | 2019-08-03 | 2019-10-08 |  |  |  | 23d |  |  | Construct | 3VEN_05 | EXE |
| 157 | 1.9.3.9 | Acabados | 2w | 2019-08-10 | 2019-08-23 | 150SS |  |  | 55d | 0d |  | Construct | 3ACA_01 | EXE |
| 158 | 1.9.3.10 | Puertas | 1w | 2019-08-24 | 2019-08-30 | 157FF+1w |  |  | 55d |  |  | Construct | 3PUE_01 | EXE |
| 159 | 1.10 | **Exteriores** | 168d | 2019-03-04 A | 2019-09-21 |  | 24% | 127.45d | 37d |  |  |  |  |  |
| 160 | 1.10.1 | Cortes y rellenos | 13w | 2019-03-04 A | 2019-06-07 | 32FS-1w, 78FS-1w, 126FS-1w | 95% | 0.65w | 1d | 0d |  | Construct |  | EXE |
| 161 | 1.10.2 | Drenaje sanitario | 10w | 2019-06-15 | 2019-08-23 | 160FS+1w |  |  | 55d | 0d |  | Construct | EXT_01 | EXE |
| 162 | 1.10.3 | Registros | 8w | 2019-07-06 | 2019-08-30 | 161FF+1w |  |  | 55d |  |  | Construct | EXT_02 | EXE |
| 163 | 1.10.4 | Pavimentos | 8w | 2019-07-27 | 2019-09-21 |  |  |  | 37d |  | start no earlier than 2019-07-27 | Construct | EXT_03 | EXE |
| 164 | 1.10.5 | Definición Deslinde Truper | 1d | 2019-05-10 A | 2019-05-10 A |  | 100% |  |  |  | start no earlier than 2019-05-10 | Construct |  | EXE |
| 165 | 1.10.6 | Barda perimetral | 16w | 2019-05-11 A | 2019-08-30 | 164 | 5% | 15.2w | 55d |  |  | Construct |  | EXE |

| ID | WBS | Task | Type | Duration | Start | Finish | Predecessors | Total slack | Free slack | Constraint | Texto1 | Texto3 |
| --- | --- | --- | --- | --- | --- | --- | --- | --- | --- | --- | --- | --- |
| 166 | 1.11 | **Plataforma para servicios** |  | 139d? | 2019-05-27 | 2019-11-04 | 160FS-2w |  |  |  |  |  |
| 167 | 1.11.1 | **Área de Palas** |  | 20w? | 2019-05-27 | 2019-10-14 |  |  |  |  |  |  |
| 168 | 1.11.1.1 | Piso de concreto |  | 10w | 2019-06-01 | 2019-08-09 |  | 85d |  | start no earlier than 2019-06-01 | Construct | EXE |
| 169 | 1.11.1.2 | Compresores |  | 4w | 2019-06-10 | 2019-07-06 |  | 114d |  | start no earlier than 2019-06-10 | Construct | EXE |
| 170 | 1.11.1.3 | Torre de enfriamiento |  | 6w | 2019-06-10 | 2019-07-20 |  | 102d |  | start no earlier than 2019-06-10 | Construct | EXE |
| 171 | 1.11.1.4 | Chiller |  | 5w | 2019-06-17 | 2019-07-20 |  | 102d |  | start no earlier than 2019-06-17 | Construct | EXE |
| 172 | 1.11.1.5 | Show Room |  | 1d? | 2019-05-27 | 2019-05-27 |  | 149d |  |  | Construct | EXE |
| 173 | 1.11.1.6 | Oficinas |  | 16w | 2019-06-24 | 2019-10-14 |  | 30d |  | start no earlier than 2019-06-24 | Construct | EXE |
| 174 | 1.11.1.7 | Colector de Polvo |  | 5w | 2019-06-24 | 2019-07-27 |  | 96d |  | start no earlier than 2019-06-24 | Construct | EXE |
| 175 | 1.11.1.8 | MATERIAL ELECTRICO | milestone | 0d | 2019-07-05 | 2019-07-05 |  | 116d | 8d | start no earlier than 2019-07-05 | Construct | EXE |
| 176 | 1.11.1.9 | Subestación Eléctrica |  | 6w | 2019-06-03 | 2019-07-13 | 175FF | 108d |  | start no earlier than 2019-06-03 | Construct | EXE |
| 177 | 1.11.2 | **Área de Lineas Varias** |  | 18.17w | 2019-07-01 | 2019-11-04 |  |  |  |  |  |  |
| 178 | 1.11.2.1 | Chiller |  | 5w | 2019-07-01 | 2019-08-03 |  | 78d |  |  | Construct | EXE |
| 179 | 1.11.2.2 | Torre de enfriamiento |  | 6w | 2019-07-01 | 2019-08-10 |  | 72d |  |  | Construct | EXE |
| 180 | 1.11.2.3 | Colectores de Polvo |  | 5w | 2019-08-05 | 2019-09-07 |  | 60d |  | start no earlier than 2019-08-05 | Construct | EXE |
| 181 | 1.11.2.4 | Subestación Eléctrica |  | 6w | 2019-07-22 | 2019-08-31 |  | 66d |  | start no earlier than 2019-07-22 | Construct | EXE |
| 182 | 1.11.2.5 | Oficinas |  | 16w | 2019-07-15 | 2019-11-04 |  | 12d |  | start no earlier than 2019-07-15 | Construct | EXE |
| 183 | 1.11.2.6 | Taller de Manto. |  | 5w | 2019-09-04 | 2019-10-09 |  | 34d |  | start no earlier than 2019-09-04 | Construct | EXE |
| 184 | 1.11.2.7 | Compresores |  | 4w | 2019-10-09 | 2019-11-05 |  | 11d |  | start no earlier than 2019-10-09 | Construct | EXE |
| 185 | 1.12 | Entrega Benefica | milestone | 0d | 2019-07-31 | 2019-07-31 | 29 | 93d |  |  |  | PLA |
| 186 | 1.13 | Entrega Sustancial | milestone | 0d | 2019-11-04 | 2019-11-04 | 159, 29, 158, 76, 121, 177 | 0d |  |  |  | PLA |
| 187 | 1.14 | Punch List |  | 12d | 2019-11-05 | 2019-11-19 | 186 | 0d |  |  |  | PLA |
| 188 | 1.15 | Entrega Final | milestone | 0d | 2019-11-19 | 2019-11-19 | 187 | 0d |  |  |  | PLA |
